# Разработка карты города

How a schedule from MS Project changed from version to version. A marks actual dates.

## Version 1 (saved 2023-03-06)

Note of the change: ADD: задание 2 без оптимизации

| ID | WBS | Task | Duration | Start | Finish | Predecessors | Total float | Constraint |
| --- | --- | --- | --- | --- | --- | --- | --- | --- |
| 1 |  | Начало проекта | 0w | 2023-03-01 09:00 | 2023-03-01 09:00 |  | 70d |  |
| 2 | 2 | **Создание интерфейса** | 110d | 2023-03-01 09:00 | 2023-08-09 10:00 | 1 | 0d |  |
| 3 | 2.1 | **Разработка дизайна интерфейса** | 25d | 2023-03-01 09:00 | 2023-04-06 10:00 |  | 70d |  |
| 4 |  | Разработка 2D графических элементов | 3w | 2023-03-01 09:00 | 2023-03-23 10:00 |  | 70d |  |
| 5 |  | Разработка 3D графических элементов | 2w | 2023-03-01 09:00 | 2023-03-16 10:00 | 4SS | 70d |  |
| 6 |  | Создание заставки | 3w | 2023-03-16 10:00 | 2023-04-06 10:00 | 5 | 70d |  |
| 7 |  | Программирование интерфейса | 3w | 2023-07-19 10:00 | 2023-08-09 10:00 | 3, 12 | 0d |  |
| 8 | 3 | **Построение базы объектов** | 85d | 2023-03-23 10:00 | 2023-07-26 10:00 |  | 40d |  |
| 9 |  | Анализ и построение структуры базы объектов | 2w | 2023-03-23 10:00 | 2023-04-06 10:00 |  | 40d |  |
| 10 |  | Программирование средств обработки базы объектов | 3w | 2023-04-06 10:00 | 2023-04-27 10:00 | 9 | 40d |  |
| 11 |  | Наполнение базы объектов | 12w | 2023-04-27 10:00 | 2023-07-26 10:00 | 10 | 40d |  |
| 12 | 4 | **Создание ядра GIS** | 95d | 2023-03-01 09:00 | 2023-07-19 10:00 |  | 0d |  |
| 13 |  | Анализ и проектирование ядра | 3w | 2023-03-01 09:00 | 2023-03-23 10:00 |  | 0d |  |
| 14 |  | Создание модели ядра | 5w | 2023-03-23 10:00 | 2023-04-27 10:00 | 13 | 0d |  |
| 15 |  | Тестирование модели ядра | 1w | 2023-04-27 10:00 | 2023-05-05 10:00 | 14 | 0d |  |
| 16 |  | Создание рабочей версии ядра | 10w | 2023-05-05 10:00 | 2023-07-19 10:00 | 15 | 0d |  |
| 17 |  | Создание мультимедиа-наполнения | 6w | 2023-04-06 10:00 | 2023-05-23 10:00 | 3 | 85d |  |
| 18 |  | Создание справочной системы | 2w | 2023-08-18 10:00 | 2023-09-01 10:00 | 7 | 13d |  |
| 19 | 7 | **Создание руководства пользователя** | 17d | 2023-07-26 10:00 | 2023-08-18 10:00 | 7FS-10d | 0d |  |
| 20 |  | Разработка дизайна руководства | 1w | 2023-07-26 10:00 | 2023-08-02 10:00 |  | 0d |  |
| 21 |  | Написание руководства пользователя | 3w | 2023-07-28 10:00 | 2023-08-18 10:00 | 20SS+2d | 0d |  |
| 22 | 8 | **Создание web-сайта и поддержки** | 23d | 2023-07-28 10:00 | 2023-08-30 10:00 |  | 0d |  |
| 23 |  | Разработка структуры сайта | 1d | 2023-07-28 10:00 | 2023-07-31 10:00 | 21SS | 0d |  |
| 24 |  | Разработка дизайна сайта | 1.4w | 2023-07-31 10:00 | 2023-08-09 10:00 | 23 | 0d |  |
| 25 |  | Наполнение сайта | 3w | 2023-08-09 10:00 | 2023-08-30 10:00 | 24 | 0d |  |
| 26 |  | Тестирование сайта | 4w | 2023-08-23 10:00 | 2023-09-20 10:00 | 22FS-1w | 0d |  |
| 27 |  | Сдача сайта в эксплуатацию | 0w | 2023-09-20 10:00 | 2023-09-20 10:00 | 26 | 0d |  |
| 28 | 11 | **Совещание** | 139.89d | 2023-03-01 09:00 | 2023-09-20 09:08 |  | 0.11d |  |
| 29 |  | Совещание 1 | 0.14h | 2023-03-01 09:00 | 2023-03-01 09:08 |  | 139.98d | start no earlier than 2023-03-01 09:00 |
| 30 |  | Совещание 2 | 0.14h | 2023-03-15 09:00 | 2023-03-15 09:08 |  | 131.11d | start no earlier than 2023-03-15 09:00 |
| 31 |  | Совещание 3 | 0.14h | 2023-03-22 09:00 | 2023-03-22 09:08 |  | 126.11d | start no earlier than 2023-03-22 09:00 |
| 32 |  | Совещание 4 | 0.14h | 2023-03-29 09:00 | 2023-03-29 09:08 |  | 121.11d | start no earlier than 2023-03-29 09:00 |
| 33 |  | Совещание 5 | 0.14h | 2023-04-05 09:00 | 2023-04-05 09:08 |  | 116.11d | start no earlier than 2023-04-05 09:00 |
| 34 |  | Совещание 6 | 0.14h | 2023-04-12 09:00 | 2023-04-12 09:08 |  | 111.11d | start no earlier than 2023-04-12 09:00 |
| 35 |  | Совещание 7 | 0.14h | 2023-04-19 09:00 | 2023-04-19 09:08 |  | 106.11d | start no earlier than 2023-04-19 09:00 |
| 36 |  | Совещание 8 | 0.14h | 2023-04-26 09:00 | 2023-04-26 09:08 |  | 101.11d | start no earlier than 2023-04-26 09:00 |
| 37 |  | Совещание 9 | 0.14h | 2023-05-03 09:00 | 2023-05-03 09:08 |  | 97.11d | start no earlier than 2023-05-03 09:00 |
| 38 |  | Совещание 10 | 0.14h | 2023-05-10 09:00 | 2023-05-10 09:08 |  | 94.11d | start no earlier than 2023-05-10 09:00 |
| 39 |  | Совещание 11 | 0.14h | 2023-05-17 09:00 | 2023-05-17 09:08 |  | 89.11d | start no earlier than 2023-05-17 09:00 |
| 40 |  | Совещание 12 | 0.14h | 2023-05-24 09:00 | 2023-05-24 09:08 |  | 84.11d | start no earlier than 2023-05-24 09:00 |
| 41 |  | Совещание 13 | 0.14h | 2023-05-31 09:00 | 2023-05-31 09:08 |  | 79.11d | start no earlier than 2023-05-31 09:00 |
| 42 |  | Совещание 14 | 0.14h | 2023-06-07 09:00 | 2023-06-07 09:08 |  | 74.11d | start no earlier than 2023-06-07 09:00 |
| 43 |  | Совещание 15 | 0.14h | 2023-06-14 09:00 | 2023-06-14 09:08 |  | 70.11d | start no earlier than 2023-06-14 09:00 |
| 44 |  | Совещание 16 | 0.14h | 2023-06-21 09:00 | 2023-06-21 09:08 |  | 65.11d | start no earlier than 2023-06-21 09:00 |
| 45 |  | Совещание 17 | 0.14h | 2023-06-28 09:00 | 2023-06-28 09:08 |  | 60.11d | start no earlier than 2023-06-28 09:00 |
| 46 |  | Совещание 18 | 0.14h | 2023-07-05 09:00 | 2023-07-05 09:08 |  | 55.11d | start no earlier than 2023-07-05 09:00 |
| 47 |  | Совещание 19 | 0.14h | 2023-07-12 09:00 | 2023-07-12 09:08 |  | 50.11d | start no earlier than 2023-07-12 09:00 |
| 48 |  | Совещание 20 | 0.14h | 2023-07-19 09:00 | 2023-07-19 09:08 |  | 45.11d | start no earlier than 2023-07-19 09:00 |
| 49 |  | Совещание 21 | 0.14h | 2023-07-26 09:00 | 2023-07-26 09:08 |  | 40.11d | start no earlier than 2023-07-26 09:00 |
| 50 |  | Совещание 22 | 0.14h | 2023-08-02 09:00 | 2023-08-02 09:08 |  | 35.11d | start no earlier than 2023-08-02 09:00 |
| 51 |  | Совещание 23 | 0.14h | 2023-08-09 09:00 | 2023-08-09 09:08 |  | 30.11d | start no earlier than 2023-08-09 09:00 |
| 52 |  | Совещание 24 | 0.14h | 2023-08-16 09:00 | 2023-08-16 09:08 |  | 25.11d | start no earlier than 2023-08-16 09:00 |
| 53 |  | Совещание 25 | 0.14h | 2023-08-23 09:00 | 2023-08-23 09:08 |  | 20.11d | start no earlier than 2023-08-23 09:00 |
| 54 |  | Совещание 26 | 0.14h | 2023-08-30 09:00 | 2023-08-30 09:08 |  | 15.11d | start no earlier than 2023-08-30 09:00 |
| 55 |  | Совещание 27 | 0.14h | 2023-09-06 09:00 | 2023-09-06 09:08 |  | 10.11d | start no earlier than 2023-09-06 09:00 |
| 56 |  | Совещание 28 | 0.14h | 2023-09-13 09:00 | 2023-09-13 09:08 |  | 5.11d | start no earlier than 2023-09-13 09:00 |
| 57 |  | Совещание 29 | 0.14h | 2023-09-20 09:00 | 2023-09-20 09:08 |  | 0.11d | start no earlier than 2023-09-20 09:00 |

## Version 2 (saved 2023-03-07)

Note of the change: Merge pull request #3 from MyMiDiII/lab03

Last finish stays 2023-09-20.

Changed:

| ID | Task | Finish | Duration | Total float |
| --- | --- | --- | --- | --- |
| 28 | **Совещание** | 2023-09-20 09:08 → 2023-09-20 10:00 | 139.89d → 140d | 0.11d → 0d |
| 29 | Совещание 1 | 2023-03-01 09:08 → 2023-03-01 10:00 | 0.14h → 1h | 139.98d → 139.88d |
| 30 | Совещание 2 | 2023-03-15 09:08 → 2023-03-15 10:00 | 0.14h → 1h | 131.11d → 131d |
| 31 | Совещание 3 | 2023-03-22 09:08 → 2023-03-22 10:00 | 0.14h → 1h | 126.11d → 126d |
| 32 | Совещание 4 | 2023-03-29 09:08 → 2023-03-29 10:00 | 0.14h → 1h | 121.11d → 121d |
| 33 | Совещание 5 | 2023-04-05 09:08 → 2023-04-05 10:00 | 0.14h → 1h | 116.11d → 116d |
| 34 | Совещание 6 | 2023-04-12 09:08 → 2023-04-12 10:00 | 0.14h → 1h | 111.11d → 111d |
| 35 | Совещание 7 | 2023-04-19 09:08 → 2023-04-19 10:00 | 0.14h → 1h | 106.11d → 106d |
| 36 | Совещание 8 | 2023-04-26 09:08 → 2023-04-26 10:00 | 0.14h → 1h | 101.11d → 101d |
| 37 | Совещание 9 | 2023-05-03 09:08 → 2023-05-03 10:00 | 0.14h → 1h | 97.11d → 97d |
| 38 | Совещание 10 | 2023-05-10 09:08 → 2023-05-10 10:00 | 0.14h → 1h | 94.11d → 94d |
| 39 | Совещание 11 | 2023-05-17 09:08 → 2023-05-17 10:00 | 0.14h → 1h | 89.11d → 89d |
| 40 | Совещание 12 | 2023-05-24 09:08 → 2023-05-24 10:00 | 0.14h → 1h | 84.11d → 84d |
| 41 | Совещание 13 | 2023-05-31 09:08 → 2023-05-31 10:00 | 0.14h → 1h | 79.11d → 79d |
| 42 | Совещание 14 | 2023-06-07 09:08 → 2023-06-07 10:00 | 0.14h → 1h | 74.11d → 74d |
| 43 | Совещание 15 | 2023-06-14 09:08 → 2023-06-14 10:00 | 0.14h → 1h | 70.11d → 70d |
| 44 | Совещание 16 | 2023-06-21 09:08 → 2023-06-21 10:00 | 0.14h → 1h | 65.11d → 65d |
| 45 | Совещание 17 | 2023-06-28 09:08 → 2023-06-28 10:00 | 0.14h → 1h | 60.11d → 60d |
| 46 | Совещание 18 | 2023-07-05 09:08 → 2023-07-05 10:00 | 0.14h → 1h | 55.11d → 55d |
| 47 | Совещание 19 | 2023-07-12 09:08 → 2023-07-12 10:00 | 0.14h → 1h | 50.11d → 50d |
| 48 | Совещание 20 | 2023-07-19 09:08 → 2023-07-19 10:00 | 0.14h → 1h | 45.11d → 45d |
| 49 | Совещание 21 | 2023-07-26 09:08 → 2023-07-26 10:00 | 0.14h → 1h | 40.11d → 40d |
| 50 | Совещание 22 | 2023-08-02 09:08 → 2023-08-02 10:00 | 0.14h → 1h | 35.11d → 35d |
| 51 | Совещание 23 | 2023-08-09 09:08 → 2023-08-09 10:00 | 0.14h → 1h | 30.11d → 30d |
| 52 | Совещание 24 | 2023-08-16 09:08 → 2023-08-16 10:00 | 0.14h → 1h | 25.11d → 25d |
| 53 | Совещание 25 | 2023-08-23 09:08 → 2023-08-23 10:00 | 0.14h → 1h | 20.11d → 20d |
| 54 | Совещание 26 | 2023-08-30 09:08 → 2023-08-30 10:00 | 0.14h → 1h | 15.11d → 15d |
| 55 | Совещание 27 | 2023-09-06 09:08 → 2023-09-06 10:00 | 0.14h → 1h | 10.11d → 10d |
| 56 | Совещание 28 | 2023-09-13 09:08 → 2023-09-13 10:00 | 0.14h → 1h | 5.11d → 5d |
| 57 | Совещание 29 | 2023-09-20 09:08 → 2023-09-20 10:00 | 0.14h → 1h | 0.11d → 0d |
