# Разработка карты города

How a schedule from MS Project changed from version to version. A marks actual dates.

## Version 1 (saved 2023-03-06)

Note of the change: ADD: задание 2 без оптимизации

| ID | WBS | Task | Duration | Start | Finish | Predecessors | Total float | Constraint |
| --- | --- | --- | --- | --- | --- | --- | --- | --- |
| 1 |  | Начало проекта | 0w | 2023-03-01 09:00 | 2023-03-01 09:00 |  | 70d |  |
| 2 | 2 | **Создание интерфейса** | 110d | 2023-03-01 09:00 | 2023-08-09 10:00 | 1 | 0d |  |
| 3 | 2.1 | **Разработка дизайна интерфейса** | 25d | 2023-03-01 09:00 | 2023-04-06 10:00 |  | 70d |  |
| 4 |  | Разработка 2D графических элементов | 3w | 2023-03-01 09:00 | 2023-03-23 10:00 |  | 70d |  |
| 5 |  | Разработка 3D графических элементов | 2w | 2023-03-01 09:00 | 2023-03-16 10:00 | 4SS | 70d |  |
| 6 |  | Создание заставки | 3w | 2023-03-16 10:00 | 2023-04-06 10:00 | 5 | 70d |  |
| 7 |  | Программирование интерфейса | 3w | 2023-07-19 10:00 | 2023-08-09 10:00 | 3, 12 | 0d |  |
| 8 | 3 | **Построение базы объектов** | 85d | 2023-03-23 10:00 | 2023-07-26 10:00 |  | 40d |  |
| 9 |  | Анализ и построение структуры базы объектов | 2w | 2023-03-23 10:00 | 2023-04-06 10:00 |  | 40d |  |
| 10 |  | Программирование средств обработки базы объектов | 3w | 2023-04-06 10:00 | 2023-04-27 10:00 | 9 | 40d |  |
| 11 |  | Наполнение базы объектов | 12w | 2023-04-27 10:00 | 2023-07-26 10:00 | 10 | 40d |  |
| 12 | 4 | **Создание ядра GIS** | 95d | 2023-03-01 09:00 | 2023-07-19 10:00 |  | 0d |  |
| 13 |  | Анализ и проектирование ядра | 3w | 2023-03-01 09:00 | 2023-03-23 10:00 |  | 0d |  |
| 14 |  | Создание модели ядра | 5w | 2023-03-23 10:00 | 2023-04-27 10:00 | 13 | 0d |  |
| 15 |  | Тестирование модели ядра | 1w | 2023-04-27 10:00 | 2023-05-05 10:00 | 14 | 0d |  |
| 16 |  | Создание рабочей версии ядра | 10w | 2023-05-05 10:00 | 2023-07-19 10:00 | 15 | 0d |  |
| 17 |  | Создание мультимедиа-наполнения | 6w | 2023-04-06 10:00 | 2023-05-23 10:00 | 3 | 85d |  |
| 18 |  | Создание справочной системы | 2w | 2023-08-18 10:00 | 2023-09-01 10:00 | 7 | 13d |  |
| 19 | 7 | **Создание руководства пользователя** | 17d | 2023-07-26 10:00 | 2023-08-18 10:00 | 7FS-10d | 0d |  |
| 20 |  | Разработка дизайна руководства | 1w | 2023-07-26 10:00 | 2023-08-02 10:00 |  | 0d |  |
| 21 |  | Написание руководства пользователя | 3w | 2023-07-28 10:00 | 2023-08-18 10:00 | 20SS+2d | 0d |  |
| 22 | 8 | **Создание web-сайта и поддержки** | 23d | 2023-07-28 10:00 | 2023-08-30 10:00 |  | 0d |  |
| 23 |  | Разработка структуры сайта | 1d | 2023-07-28 10:00 | 2023-07-31 10:00 | 21SS | 0d |  |
| 24 |  | Разработка дизайна сайта | 1.4w | 2023-07-31 10:00 | 2023-08-09 10:00 | 23 | 0d |  |
| 25 |  | Наполнение сайта | 3w | 2023-08-09 10:00 | 2023-08-30 10:00 | 24 | 0d |  |
| 26 |  | Тестирование сайта | 4w | 2023-08-23 10:00 | 2023-09-20 10:00 | 22FS-1w | 0d |  |
| 27 |  | Сдача сайта в эксплуатацию | 0w | 2023-09-20 10:00 | 2023-09-20 10:00 | 26 | 0d |  |
| 28 | 11 | **Совещание** | 139.89d | 2023-03-01 09:00 | 2023-09-20 09:08 |  | 0.11d |  |
| 29 |  | Совещание 1 | 0.14h | 2023-03-01 09:00 | 2023-03-01 09:08 |  | 139.98d | start no earlier than 2023-03-01 09:00 |
| 30 |  | Совещание 2 | 0.14h | 2023-03-15 09:00 | 2023-03-15 09:08 |  | 131.11d | start no earlier than 2023-03-15 09:00 |
| 31 |  | Совещание 3 | 0.14h | 2023-03-22 09:00 | 2023-03-22 09:08 |  | 126.11d | start no earlier than 2023-03-22 09:00 |
| 32 |  | Совещание 4 | 0.14h | 2023-03-29 09:00 | 2023-03-29 09:08 |  | 121.11d | start no earlier than 2023-03-29 09:00 |
| 33 |  | Совещание 5 | 0.14h | 2023-04-05 09:00 | 2023-04-05 09:08 |  | 116.11d | start no earlier than 2023-04-05 09:00 |
| 34 |  | Совещание 6 | 0.14h | 2023-04-12 09:00 | 2023-04-12 09:08 |  | 111.11d | start no earlier than 2023-04-12 09:00 |
| 35 |  | Совещание 7 | 0.14h | 2023-04-19 09:00 | 2023-04-19 09:08 |  | 106.11d | start no earlier than 2023-04-19 09:00 |
| 36 |  | Совещание 8 | 0.14h | 2023-04-26 09:00 | 2023-04-26 09:08 |  | 101.11d | start no earlier than 2023-04-26 09:00 |
| 37 |  | Совещание 9 | 0.14h | 2023-05-03 09:00 | 2023-05-03 09:08 |  | 97.11d | start no earlier than 2023-05-03 09:00 |
| 38 |  | Совещание 10 | 0.14h | 2023-05-10 09:00 | 2023-05-10 09:08 |  | 94.11d | start no earlier than 2023-05-10 09:00 |
| 39 |  | Совещание 11 | 0.14h | 2023-05-17 09:00 | 2023-05-17 09:08 |  | 89.11d | start no earlier than 2023-05-17 09:00 |
| 40 |  | Совещание 12 | 0.14h | 2023-05-24 09:00 | 2023-05-24 09:08 |  | 84.11d | start no earlier than 2023-05-24 09:00 |
| 41 |  | Совещание 13 | 0.14h | 2023-05-31 09:00 | 2023-05-31 09:08 |  | 79.11d | start no earlier than 2023-05-31 09:00 |
| 42 |  | Совещание 14 | 0.14h | 2023-06-07 09:00 | 2023-06-07 09:08 |  | 74.11d | start no earlier than 2023-06-07 09:00 |
| 43 |  | Совещание 15 | 0.14h | 2023-06-14 09:00 | 2023-06-14 09:08 |  | 70.11d | start no earlier than 2023-06-14 09:00 |
| 44 |  | Совещание 16 | 0.14h | 2023-06-21 09:00 | 2023-06-21 09:08 |  | 65.11d | start no earlier than 2023-06-21 09:00 |
| 45 |  | Совещание 17 | 0.14h | 2023-06-28 09:00 | 2023-06-28 09:08 |  | 60.11d | start no earlier than 2023-06-28 09:00 |
| 46 |  | Совещание 18 | 0.14h | 2023-07-05 09:00 | 2023-07-05 09:08 |  | 55.11d | start no earlier than 2023-07-05 09:00 |
| 47 |  | Совещание 19 | 0.14h | 2023-07-12 09:00 | 2023-07-12 09:08 |  | 50.11d | start no earlier than 2023-07-12 09:00 |
| 48 |  | Совещание 20 | 0.14h | 2023-07-19 09:00 | 2023-07-19 09:08 |  | 45.11d | start no earlier than 2023-07-19 09:00 |
| 49 |  | Совещание 21 | 0.14h | 2023-07-26 09:00 | 2023-07-26 09:08 |  | 40.11d | start no earlier than 2023-07-26 09:00 |
| 50 |  | Совещание 22 | 0.14h | 2023-08-02 09:00 | 2023-08-02 09:08 |  | 35.11d | start no earlier than 2023-08-02 09:00 |
| 51 |  | Совещание 23 | 0.14h | 2023-08-09 09:00 | 2023-08-09 09:08 |  | 30.11d | start no earlier than 2023-08-09 09:00 |
| 52 |  | Совещание 24 | 0.14h | 2023-08-16 09:00 | 2023-08-16 09:08 |  | 25.11d | start no earlier than 2023-08-16 09:00 |
| 53 |  | Совещание 25 | 0.14h | 2023-08-23 09:00 | 2023-08-23 09:08 |  | 20.11d | start no earlier than 2023-08-23 09:00 |
| 54 |  | Совещание 26 | 0.14h | 2023-08-30 09:00 | 2023-08-30 09:08 |  | 15.11d | start no earlier than 2023-08-30 09:00 |
| 55 |  | Совещание 27 | 0.14h | 2023-09-06 09:00 | 2023-09-06 09:08 |  | 10.11d | start no earlier than 2023-09-06 09:00 |
| 56 |  | Совещание 28 | 0.14h | 2023-09-13 09:00 | 2023-09-13 09:08 |  | 5.11d | start no earlier than 2023-09-13 09:00 |
| 57 |  | Совещание 29 | 0.14h | 2023-09-20 09:00 | 2023-09-20 09:08 |  | 0.11d | start no earlier than 2023-09-20 09:00 |

## Version 2 (saved 2023-03-07)

Note of the change: ADD: полное задание 2 лр3

Last finish stays 2023-09-20.

Changed:

| ID | Task | Start | Finish | Duration | Total float |
| --- | --- | --- | --- | --- | --- |
| 2 | **Создание интерфейса** | 2023-03-01 09:00 → 2023-03-01 09:08 | 2023-08-09 10:00 → 2023-08-09 12:34 | 110d → 110.3d |  |
| 3 | **Разработка дизайна интерфейса** | 2023-03-01 09:00 → 2023-03-01 09:08 | 2023-04-06 10:00 → 2023-04-06 10:43 | 25d → 25.07d | 70d → 70.23d |
| 4 | Разработка 2D графических элементов | 2023-03-01 09:00 → 2023-03-01 09:08 | 2023-03-23 10:00 → 2023-03-23 10:25 |  | 70d → 70.23d |
| 5 | Разработка 3D графических элементов | 2023-03-01 09:00 → 2023-03-01 09:08 | 2023-03-16 10:00 → 2023-03-16 10:17 |  | 70d → 70.23d |
| 6 | Создание заставки | 2023-03-16 10:00 → 2023-03-16 10:17 | 2023-04-06 10:00 → 2023-04-06 10:43 |  | 70d → 70.23d |
| 7 | Программирование интерфейса | 2023-07-19 10:00 → 2023-07-19 12:34 | 2023-08-09 10:00 → 2023-08-09 12:34 |  |  |
| 8 | **Построение базы объектов** | 2023-03-23 10:00 → 2023-03-23 10:25 | 2023-07-26 10:00 → 2023-07-26 10:43 | 85d → 85.04d | 40d → 40.34d |
| 9 | Анализ и построение структуры базы объектов | 2023-03-23 10:00 → 2023-03-23 10:25 | 2023-04-06 10:00 → 2023-04-06 10:43 |  | 40d → 40.34d |
| 10 | Программирование средств обработки базы объектов | 2023-04-06 10:00 → 2023-04-06 10:43 | 2023-04-27 10:00 → 2023-04-27 10:43 |  | 40d → 40.34d |
| 11 | Наполнение базы объектов | 2023-04-27 10:00 → 2023-04-27 10:43 | 2023-07-26 10:00 → 2023-07-26 10:43 |  | 40d → 40.34d |
| 12 | **Создание ядра GIS** | 2023-03-01 09:00 → 2023-03-01 09:08 | 2023-07-19 10:00 → 2023-07-19 12:34 | 95d → 95.3d |  |
| 13 | Анализ и проектирование ядра | 2023-03-01 09:00 → 2023-03-01 09:08 | 2023-03-23 10:00 → 2023-03-23 10:25 |  |  |
| 14 | Создание модели ядра | 2023-03-23 10:00 → 2023-03-23 10:25 | 2023-04-27 10:00 → 2023-04-27 11:08 | 5w → 5.02w |  |
| 15 | Тестирование модели ядра | 2023-04-27 10:00 → 2023-04-27 11:08 | 2023-05-05 10:00 → 2023-05-05 11:08 |  |  |
| 16 | Создание рабочей версии ядра | 2023-05-05 10:00 → 2023-05-05 11:08 | 2023-07-19 10:00 → 2023-07-19 12:34 | 10w → 10.04w |  |
| 17 | Создание мультимедиа-наполнения | 2023-04-06 10:00 → 2023-04-06 10:43 | 2023-05-23 10:00 → 2023-05-23 11:34 |  | 85d → 85.23d |
| 18 | Создание справочной системы | 2023-08-18 10:00 → 2023-08-18 14:00 | 2023-09-01 10:00 → 2023-09-01 14:17 |  | 13d → 13.02d |
| 19 | **Создание руководства пользователя** | 2023-07-26 10:00 → 2023-07-26 12:34 | 2023-08-18 10:00 → 2023-08-18 14:00 | 17d → 17.05d |  |
| 20 | Разработка дизайна руководства | 2023-07-26 10:00 → 2023-07-26 12:34 | 2023-08-02 10:00 → 2023-08-02 12:34 |  |  |
| 21 | Написание руководства пользователя | 2023-07-28 10:00 → 2023-07-28 12:34 | 2023-08-18 10:00 → 2023-08-18 14:00 |  |  |
| 22 | **Создание web-сайта и поддержки** | 2023-07-28 10:00 → 2023-07-28 12:34 | 2023-08-30 10:00 → 2023-08-30 14:00 | 23d → 23.05d |  |
| 23 | Разработка структуры сайта | 2023-07-28 10:00 → 2023-07-28 12:34 | 2023-07-31 10:00 → 2023-07-31 12:34 |  |  |
| 24 | Разработка дизайна сайта | 2023-07-31 10:00 → 2023-07-31 12:34 | 2023-08-09 10:00 → 2023-08-09 12:43 |  |  |
| 25 | Наполнение сайта | 2023-08-09 10:00 → 2023-08-09 12:43 | 2023-08-30 10:00 → 2023-08-30 14:00 |  |  |
| 26 | Тестирование сайта | 2023-08-23 10:00 → 2023-08-23 14:00 | 2023-09-20 10:00 → 2023-09-20 14:26 | 4w → 4.01w |  |
| 27 | Сдача сайта в эксплуатацию | 2023-09-20 10:00 → 2023-09-20 14:26 | 2023-09-20 10:00 → 2023-09-20 14:26 |  |  |

## Version 3 (saved 2023-03-07)

Note of the change: FIX: исправление совещаний на фиксированную длительность

Last finish 2023-09-20 → 2023-09-27 (+7d).

Changed:

| ID | Task | Start | Finish | Duration | Total float |
| --- | --- | --- | --- | --- | --- |
| 2 | **Создание интерфейса** | 2023-03-01 09:08 → 2023-03-01 10:00 | 2023-08-09 12:34 → 2023-08-11 12:00 (+2d) | 110.3d → 112.12d |  |
| 3 | **Разработка дизайна интерфейса** | 2023-03-01 09:08 → 2023-03-01 10:00 | 2023-04-06 10:43 → 2023-04-06 16:00 | 25.07d → 25.5d | 70.23d → 71.62d |
| 4 | Разработка 2D графических элементов | 2023-03-01 09:08 → 2023-03-01 10:00 | 2023-03-23 10:25 → 2023-03-23 13:00 |  | 70.23d → 71.62d |
| 5 | Разработка 3D графических элементов | 2023-03-01 09:08 → 2023-03-01 10:00 | 2023-03-16 10:17 → 2023-03-16 12:00 |  | 70.23d → 71.62d |
| 6 | Создание заставки | 2023-03-16 10:17 → 2023-03-16 12:00 | 2023-04-06 10:43 → 2023-04-06 16:00 |  | 70.23d → 71.62d |
| 7 | Программирование интерфейса | 2023-07-19 12:34 → 2023-07-21 12:00 (+2d) | 2023-08-09 12:34 → 2023-08-11 12:00 (+2d) |  |  |
| 8 | **Построение базы объектов** | 2023-03-23 10:25 → 2023-03-23 14:00 | 2023-07-26 10:43 → 2023-07-26 16:00 | 85.04d → 85.25d | 40.34d → 44.38d |
| 9 | Анализ и построение структуры базы объектов | 2023-03-23 10:25 → 2023-03-23 14:00 | 2023-04-06 10:43 → 2023-04-06 16:00 |  | 40.34d → 44.38d |
| 10 | Программирование средств обработки базы объектов | 2023-04-06 10:43 → 2023-04-06 16:00 | 2023-04-27 10:43 → 2023-04-27 16:00 |  | 40.34d → 44.38d |
| 11 | Наполнение базы объектов | 2023-04-27 10:43 → 2023-04-27 16:00 | 2023-07-26 10:43 → 2023-07-26 16:00 |  | 40.34d → 44.38d |
| 12 | **Создание ядра GIS** | 2023-03-01 09:08 → 2023-03-01 10:00 | 2023-07-19 12:34 → 2023-07-21 12:00 (+2d) | 95.3d → 97.12d |  |
| 13 | Анализ и проектирование ядра | 2023-03-01 09:08 → 2023-03-01 10:00 | 2023-03-23 10:25 → 2023-03-23 13:00 |  |  |
| 14 | Создание модели ядра | 2023-03-23 10:25 → 2023-03-23 14:00 | 2023-04-27 11:08 → 2023-04-28 10:00 (+1d) | 5.02w → 5.12w |  |
| 15 | Тестирование модели ядра | 2023-04-27 11:08 → 2023-04-28 10:00 (+1d) | 2023-05-05 11:08 → 2023-05-10 10:00 (+5d) |  |  |
| 16 | Создание рабочей версии ядра | 2023-05-05 11:08 → 2023-05-10 10:00 (+5d) | 2023-07-19 12:34 → 2023-07-21 12:00 (+2d) | 10.04w → 10.25w |  |
| 17 | Создание мультимедиа-наполнения | 2023-04-06 10:43 → 2023-04-06 16:00 | 2023-05-23 11:34 → 2023-05-24 15:00 (+1d) |  | 85.23d → 88.5d |
| 18 | Создание справочной системы | 2023-08-18 14:00 → 2023-08-22 16:00 (+4d) | 2023-09-01 14:17 → 2023-09-05 18:00 (+4d) |  | 13.02d → 15.12d |
| 19 | **Создание руководства пользователя** | 2023-07-26 12:34 → 2023-07-28 12:00 (+2d) | 2023-08-18 14:00 → 2023-08-22 16:00 (+4d) | 17.05d → 17.38d |  |
| 20 | Разработка дизайна руководства | 2023-07-26 12:34 → 2023-07-28 12:00 (+2d) | 2023-08-02 12:34 → 2023-08-04 13:00 (+2d) |  |  |
| 21 | Написание руководства пользователя | 2023-07-28 12:34 → 2023-08-01 12:00 (+4d) | 2023-08-18 14:00 → 2023-08-22 16:00 (+4d) |  |  |
| 22 | **Создание web-сайта и поддержки** | 2023-07-28 12:34 → 2023-08-01 12:00 (+4d) | 2023-08-30 14:00 → 2023-09-04 15:00 (+5d) | 23.05d → 24.25d |  |
| 23 | Разработка структуры сайта | 2023-07-28 12:34 → 2023-08-01 12:00 (+4d) | 2023-07-31 12:34 → 2023-08-02 13:00 (+2d) |  |  |
| 24 | Разработка дизайна сайта | 2023-07-31 12:34 → 2023-08-02 14:00 (+2d) | 2023-08-09 12:43 → 2023-08-11 17:00 (+2d) | 1.4w → 1.45w |  |
| 25 | Наполнение сайта | 2023-08-09 12:43 → 2023-08-11 17:00 (+2d) | 2023-08-30 14:00 → 2023-09-04 15:00 (+5d) |  |  |
| 26 | Тестирование сайта | 2023-08-23 14:00 → 2023-08-28 15:00 (+5d) | 2023-09-20 14:26 → 2023-09-27 10:00 (+7d) | 4.01w → 4.3w |  |
| 27 | Сдача сайта в эксплуатацию | 2023-09-20 14:26 → 2023-09-27 10:00 (+7d) | 2023-09-20 14:26 → 2023-09-27 10:00 (+7d) |  |  |
| 28 | **Совещание** |  | 2023-09-20 09:08 → 2023-09-20 10:00 | 139.89d → 140d | 0.54d → 5d |
| 29 | Совещание 1 |  | 2023-03-01 09:08 → 2023-03-01 10:00 | 0.14h → 1h | 140.41d → 144.88d |
| 30 | Совещание 2 |  | 2023-03-15 09:08 → 2023-03-15 10:00 | 0.14h → 1h | 131.54d → 136d |
| 31 | Совещание 3 |  | 2023-03-22 09:08 → 2023-03-22 10:00 | 0.14h → 1h | 126.54d → 131d |
| 32 | Совещание 4 |  | 2023-03-29 09:08 → 2023-03-29 10:00 | 0.14h → 1h | 121.54d → 126d |
| 33 | Совещание 5 |  | 2023-04-05 09:08 → 2023-04-05 10:00 | 0.14h → 1h | 116.54d → 121d |
| 34 | Совещание 6 |  | 2023-04-12 09:08 → 2023-04-12 10:00 | 0.14h → 1h | 111.54d → 116d |
| 35 | Совещание 7 |  | 2023-04-19 09:08 → 2023-04-19 10:00 | 0.14h → 1h | 106.54d → 111d |
| 36 | Совещание 8 |  | 2023-04-26 09:08 → 2023-04-26 10:00 | 0.14h → 1h | 101.54d → 106d |
| 37 | Совещание 9 |  | 2023-05-03 09:08 → 2023-05-03 10:00 | 0.14h → 1h | 97.54d → 102d |
| 38 | Совещание 10 |  | 2023-05-10 09:08 → 2023-05-10 10:00 | 0.14h → 1h | 94.54d → 99d |
| 39 | Совещание 11 |  | 2023-05-17 09:08 → 2023-05-17 10:00 | 0.14h → 1h | 89.54d → 94d |
| 40 | Совещание 12 |  | 2023-05-24 09:08 → 2023-05-24 10:00 | 0.14h → 1h | 84.54d → 89d |
| 41 | Совещание 13 |  | 2023-05-31 09:08 → 2023-05-31 10:00 | 0.14h → 1h | 79.54d → 84d |
| 42 | Совещание 14 |  | 2023-06-07 09:08 → 2023-06-07 10:00 | 0.14h → 1h | 74.54d → 79d |
| 43 | Совещание 15 |  | 2023-06-14 09:08 → 2023-06-14 10:00 | 0.14h → 1h | 70.54d → 75d |
| 44 | Совещание 16 |  | 2023-06-21 09:08 → 2023-06-21 10:00 | 0.14h → 1h | 65.54d → 70d |
| 45 | Совещание 17 |  | 2023-06-28 09:08 → 2023-06-28 10:00 | 0.14h → 1h | 60.54d → 65d |
| 46 | Совещание 18 |  | 2023-07-05 09:08 → 2023-07-05 10:00 | 0.14h → 1h | 55.54d → 60d |
| 47 | Совещание 19 |  | 2023-07-12 09:08 → 2023-07-12 10:00 | 0.14h → 1h | 50.54d → 55d |
| 48 | Совещание 20 |  | 2023-07-19 09:08 → 2023-07-19 10:00 | 0.14h → 1h | 45.54d → 50d |
| 49 | Совещание 21 |  | 2023-07-26 09:08 → 2023-07-26 10:00 | 0.14h → 1h | 40.54d → 45d |
| 50 | Совещание 22 |  | 2023-08-02 09:08 → 2023-08-02 10:00 | 0.14h → 1h | 35.54d → 40d |
| 51 | Совещание 23 |  | 2023-08-09 09:08 → 2023-08-09 10:00 | 0.14h → 1h | 30.54d → 35d |
| 52 | Совещание 24 |  | 2023-08-16 09:08 → 2023-08-16 10:00 | 0.14h → 1h | 25.54d → 30d |
| 53 | Совещание 25 |  | 2023-08-23 09:08 → 2023-08-23 10:00 | 0.14h → 1h | 20.54d → 25d |
| 54 | Совещание 26 |  | 2023-08-30 09:08 → 2023-08-30 10:00 | 0.14h → 1h | 15.54d → 20d |
| 55 | Совещание 27 |  | 2023-09-06 09:08 → 2023-09-06 10:00 | 0.14h → 1h | 10.54d → 15d |
| 56 | Совещание 28 |  | 2023-09-13 09:08 → 2023-09-13 10:00 | 0.14h → 1h | 5.54d → 10d |
| 57 | Совещание 29 |  | 2023-09-20 09:08 → 2023-09-20 10:00 | 0.14h → 1h | 0.54d → 5d |
