# Разработка карты города

How a schedule from MS Project changed from version to version. A marks actual dates.

## Version 1 (saved 2023-03-08, file lab04.mpp)

Note of the change: ADD: рыба лр4

| ID | WBS | Task | Duration | Start | Finish | Predecessors | Total float | Constraint |
| --- | --- | --- | --- | --- | --- | --- | --- | --- |
| 1 |  | Начало проекта | 0w | 2023-03-01 09:00 | 2023-03-01 09:00 |  | 39.17d |  |
| 2 | 2 | **Создание интерфейса** | 72.05d | 2023-03-01 10:00 | 2023-06-16 11:22 | 1 | 0d |  |
| 3 | 2.1 | **Разработка дизайна интерфейса** | 25.5d | 2023-03-01 10:00 | 2023-04-06 16:00 |  | 39.05d |  |
| 4 |  | Разработка 2D графических элементов | 3w | 2023-03-01 10:00 | 2023-03-23 13:00 |  | 39.05d |  |
| 5 |  | Разработка 3D графических элементов | 2w | 2023-03-01 10:00 | 2023-03-16 12:00 | 4SS | 39.05d |  |
| 6 |  | Создание заставки | 3w | 2023-03-16 12:00 | 2023-04-06 16:00 | 5 | 39.05d |  |
| 7 |  | Программирование интерфейса | 1.5w | 2023-06-05 16:22 | 2023-06-16 11:22 | 3, 12 | 0d |  |
| 8 | 3 | **Построение базы объектов** | 78.85d | 2023-03-23 14:00 | 2023-07-18 11:49 |  | 1.92d |  |
| 9 |  | Анализ и построение структуры базы объектов | 2w | 2023-03-23 14:00 | 2023-04-06 16:00 |  | 1.92d |  |
| 10 |  | Программирование средств обработки базы объектов | 1.5w | 2023-04-07 16:49 | 2023-04-19 11:49 | 9 | 1.92d |  |
| 11 |  | Наполнение базы объектов | 12w | 2023-04-19 11:49 | 2023-07-18 11:49 | 10 | 1.92d |  |
| 12 | 4 | **Создание ядра GIS** | 64.55d | 2023-03-01 10:00 | 2023-06-05 16:22 |  | 0d |  |
| 13 |  | Анализ и проектирование ядра | 3w | 2023-03-01 10:00 | 2023-03-23 13:00 |  | 0d |  |
| 14 |  | Создание модели ядра | 2.02w | 2023-03-23 14:00 | 2023-04-06 14:49 | 13 | 0d |  |
| 15 |  | Тестирование модели ядра | 0.25w | 2023-04-06 14:49 | 2023-04-07 16:49 | 14 | 0d |  |
| 16 |  | Создание рабочей версии ядра | 7.51w | 2023-04-07 16:49 | 2023-06-05 16:22 | 15 | 0d |  |
| 17 |  | Создание мультимедиа-наполнения | 6w | 2023-04-06 16:00 | 2023-05-24 15:00 | 3 | 39.65d |  |
| 18 |  | Создание справочной системы | 2w | 2023-06-28 10:22 | 2023-07-12 14:22 | 7 | 5.72d |  |
| 19 | 7 | **Создание руководства пользователя** | 17.88d | 2023-06-01 11:22 | 2023-06-28 10:22 | 7FS-10d | 0d |  |
| 20 |  | Разработка дизайна руководства | 1w | 2023-06-01 11:22 | 2023-06-08 14:22 |  | 0d |  |
| 21 |  | Написание руководства пользователя | 3w | 2023-06-05 11:22 | 2023-06-28 10:22 | 20SS+2d | 0d |  |
| 22 | 8 | **Создание web-сайта и поддержки** | 24.33d | 2023-06-05 11:22 | 2023-07-10 15:00 |  | 0d |  |
| 23 |  | Разработка структуры сайта | 1d | 2023-06-05 11:22 | 2023-06-06 12:22 | 21SS | 0d |  |
| 24 |  | Разработка дизайна сайта | 1.43w | 2023-06-06 12:22 | 2023-06-16 17:00 | 23 | 0d |  |
| 25 |  | Наполнение сайта | 3w | 2023-06-16 17:00 | 2023-07-10 15:00 | 24 | 0d |  |
| 26 |  | Тестирование сайта | 2.53w | 2023-07-03 15:00 | 2023-07-20 11:10 | 22FS-1w | 0d |  |
| 27 |  | Сдача сайта в эксплуатацию | 0w | 2023-07-20 11:10 | 2023-07-20 11:10 | 26 | 0d |  |
| 28 | 11 | **Совещание** | 85d | 2023-03-01 09:00 | 2023-07-05 10:00 |  | 11.15d |  |
| 29 |  | Совещание 1 | 1h | 2023-03-01 09:00 | 2023-03-01 10:00 |  | 96.02d | start no earlier than 2023-03-01 09:00 |
| 30 |  | Совещание 2 | 1h | 2023-03-15 09:00 | 2023-03-15 10:00 |  | 87.15d | start no earlier than 2023-03-15 09:00 |
| 31 |  | Совещание 3 | 1h | 2023-03-22 09:00 | 2023-03-22 10:00 |  | 82.15d | start no earlier than 2023-03-22 09:00 |
| 32 |  | Совещание 4 | 1h | 2023-03-29 09:00 | 2023-03-29 10:00 |  | 77.15d | start no earlier than 2023-03-29 09:00 |
| 33 |  | Совещание 5 | 1h | 2023-04-05 09:00 | 2023-04-05 10:00 |  | 72.15d | start no earlier than 2023-04-05 09:00 |
| 34 |  | Совещание 6 | 1h | 2023-04-12 09:00 | 2023-04-12 10:00 |  | 67.15d | start no earlier than 2023-04-12 09:00 |
| 35 |  | Совещание 7 | 1h | 2023-04-19 09:00 | 2023-04-19 10:00 |  | 62.15d | start no earlier than 2023-04-19 09:00 |
| 36 |  | Совещание 8 | 1h | 2023-04-26 09:00 | 2023-04-26 10:00 |  | 57.15d | start no earlier than 2023-04-26 09:00 |
| 37 |  | Совещание 9 | 1h | 2023-05-03 09:00 | 2023-05-03 10:00 |  | 53.15d | start no earlier than 2023-05-03 09:00 |
| 38 |  | Совещание 10 | 1h | 2023-05-10 09:00 | 2023-05-10 10:00 |  | 50.15d | start no earlier than 2023-05-10 09:00 |
| 39 |  | Совещание 11 | 1h | 2023-05-17 09:00 | 2023-05-17 10:00 |  | 45.15d | start no earlier than 2023-05-17 09:00 |
| 40 |  | Совещание 12 | 1h | 2023-05-24 09:00 | 2023-05-24 10:00 |  | 40.15d | start no earlier than 2023-05-24 09:00 |
| 41 |  | Совещание 13 | 1h | 2023-05-31 09:00 | 2023-05-31 10:00 |  | 35.15d | start no earlier than 2023-05-31 09:00 |
| 42 |  | Совещание 14 | 1h | 2023-06-07 09:00 | 2023-06-07 10:00 |  | 30.15d | start no earlier than 2023-06-07 09:00 |
| 43 |  | Совещание 15 | 1h | 2023-06-14 09:00 | 2023-06-14 10:00 |  | 26.15d | start no earlier than 2023-06-14 09:00 |
| 44 |  | Совещание 16 | 1h | 2023-06-21 09:00 | 2023-06-21 10:00 |  | 21.15d | start no earlier than 2023-06-21 09:00 |
| 45 |  | Совещание 17 | 1h | 2023-06-28 09:00 | 2023-06-28 10:00 |  | 16.15d | start no earlier than 2023-06-28 09:00 |
| 46 |  | Совещание 18 | 1h | 2023-07-05 09:00 | 2023-07-05 10:00 |  | 11.15d | start no earlier than 2023-07-05 09:00 |

## Version 2 (data date 2023-04-17, saved 2023-03-19, file lab04_00.mpp)

Note of the change: ADD: все фактические параметры кроме совещаний, но без выравнивания

Last finish 2023-07-20 → 2023-07-26 (+6d). Complete tasks 0 → 2.

Added:

| ID | Task | Duration | Start | Finish | Constraint | Resources |
| --- | --- | --- | --- | --- | --- | --- |
| 47 | Совещание 19 | 1h | 2023-07-12 09:00 | 2023-07-12 10:00 | start no earlier than 2023-07-12 09:00 | 3D аниматор; Web-дизайнер; Ведущий программист; Мультимедиа-корреспондент; Системный аналитик; Технический писатель; Художник-дизайнер |
| 48 | Совещание 20 | 1h | 2023-07-19 09:00 | 2023-07-19 10:00 | start no earlier than 2023-07-19 09:00 | 3D аниматор; Web-дизайнер; Ведущий программист; Мультимедиа-корреспондент; Системный аналитик; Технический писатель; Художник-дизайнер |

Changed:

| ID | Task | Start | Finish | Duration | Complete | Total float | Other |
| --- | --- | --- | --- | --- | --- | --- | --- |
| 2 | **Создание интерфейса** | 2023-03-01 10:00 A | 2023-06-16 11:22 → 2023-06-16 11:26 | 72.05d → 72.06d | 0% → 38% | 0d → 5.22d | baseline finish 2023-06-16 11:22 → 2023-06-16 11:26 |
| 3 | **Разработка дизайна интерфейса** | 2023-03-01 10:00 A | 2023-04-06 16:00 → 2023-04-13 18:00 (+7d) | 25.5d → 30.75d | 0% → 45% | 39.05d → 3d |  |
| 6 | Создание заставки | 2023-03-16 12:00 A | 2023-04-06 16:00 → 2023-04-13 18:00 A (+7d) | 3w → 4.05w | 0% → 100% | 39.05d → none |  |
| 7 | Программирование интерфейса | 2023-06-05 16:22 → 2023-06-05 16:26 | 2023-06-16 11:22 → 2023-06-16 11:26 |  |  | 0d → 5.22d | baseline start 2023-06-05 16:22 → 2023-06-05 16:26; baseline finish 2023-06-16 11:22 → 2023-06-16 11:26 |
| 8 | **Построение базы объектов** | 2023-03-23 14:00 A | 2023-07-18 11:49 → 2023-07-26 13:00 (+8d) | 78.85d → 85d | 0% → 20% | 1.92d → 0d | baseline finish 2023-07-18 11:49 → 2023-07-17 11:00 |
| 9 | Анализ и построение структуры базы объектов | 2023-03-23 14:00 A | 2023-04-06 16:00 → 2023-04-17 18:00 A (+11d) | 2w → 3.45w | 0% → 100% | 1.92d → none |  |
| 10 | Программирование средств обработки базы объектов | 2023-04-07 16:49 → 2023-04-18 09:00 (+11d) | 2023-04-19 11:49 → 2023-04-27 13:00 (+8d) |  |  | 1.92d → 0d | baseline start 2023-04-07 16:49 → 2023-04-06 16:00; baseline finish 2023-04-19 11:49 → 2023-04-18 11:00 |
| 11 | Наполнение базы объектов | 2023-04-19 11:49 → 2023-04-27 14:00 (+8d) | 2023-07-18 11:49 → 2023-07-26 13:00 (+8d) |  |  | 1.92d → 0d | baseline start 2023-04-19 11:49 → 2023-04-18 11:00; baseline finish 2023-07-18 11:49 → 2023-07-17 11:00 |
| 12 | **Создание ядра GIS** |  | 2023-06-05 16:22 → 2023-06-05 16:26 | 64.55d → 64.56d |  | 0d → 5.22d | baseline finish 2023-06-05 16:22 → 2023-06-05 16:26 |
| 15 | Тестирование модели ядра |  | 2023-04-07 16:49 → 2023-04-19 11:49 (+12d) |  |  | 0d → 5.22d | baseline finish 2023-04-07 16:49 → 2023-04-19 11:49 |
| 16 | Создание рабочей версии ядра | 2023-04-07 16:49 → 2023-04-19 11:49 (+12d) | 2023-06-05 16:22 → 2023-06-05 16:26 | 7.51w → 6.09w |  | 0d → 5.22d | baseline start 2023-04-07 16:49 → 2023-04-19 11:49; baseline finish 2023-06-05 16:22 → 2023-06-05 16:26 |
| 17 | Создание мультимедиа-наполнения | 2023-04-06 16:00 → 2023-04-14 09:00 A (+8d) | 2023-05-24 15:00 → 2023-05-31 17:00 (+7d) |  | 0% → 10% | 39.65d → 38.62d |  |
| 18 | Создание справочной системы | 2023-06-28 10:22 → 2023-06-27 15:26 (-1d) | 2023-07-12 14:22 → 2023-07-11 17:26 (-1d) |  |  | 5.72d → 5.35d | baseline start 2023-06-28 10:22 → 2023-06-27 15:26; baseline finish 2023-07-12 14:22 → 2023-07-11 17:26 |
| 19 | **Создание руководства пользователя** | 2023-06-01 11:22 → 2023-06-01 11:26 | 2023-06-28 10:22 → 2023-06-27 15:26 (-1d) | 17.88d → 17.38d |  | 0d → 5.22d | baseline start 2023-06-01 11:22 → 2023-06-01 11:26; baseline finish 2023-06-28 10:22 → 2023-06-27 15:26 |
| 20 | Разработка дизайна руководства | 2023-06-01 11:22 → 2023-06-01 11:26 | 2023-06-08 14:22 → 2023-06-08 12:26 |  |  | 0d → 5.22d | baseline start 2023-06-01 11:22 → 2023-06-01 11:26; baseline finish 2023-06-08 14:22 → 2023-06-08 12:26 |
| 21 | Написание руководства пользователя | 2023-06-05 11:22 → 2023-06-05 11:26 | 2023-06-28 10:22 → 2023-06-27 15:26 (-1d) |  |  | 0d → 5.22d | baseline start 2023-06-05 11:22 → 2023-06-05 11:26; baseline finish 2023-06-28 10:22 → 2023-06-27 15:26 |
| 22 | **Создание web-сайта и поддержки** | 2023-06-05 11:22 → 2023-06-05 11:26 | 2023-07-10 15:00 → 2023-07-07 17:26 (-3d) | 24.33d → 23.62d |  | 0d → 5.22d | baseline start 2023-06-05 11:22 → 2023-06-05 11:26; baseline finish 2023-07-10 15:00 → 2023-07-07 17:26 |
| 23 | Разработка структуры сайта | 2023-06-05 11:22 → 2023-06-05 11:26 | 2023-06-06 12:22 → 2023-06-06 11:26 |  |  | 0d → 5.22d | baseline start 2023-06-05 11:22 → 2023-06-05 11:26; baseline finish 2023-06-06 12:22 → 2023-06-06 11:26 |
| 24 | Разработка дизайна сайта | 2023-06-06 12:22 → 2023-06-06 11:26 | 2023-06-16 17:00 → 2023-06-16 14:26 | 1.43w → 1.4w |  | 0d → 5.22d | baseline start 2023-06-06 12:22 → 2023-06-06 11:26; baseline finish 2023-06-16 17:00 → 2023-06-16 14:26 |
| 25 | Наполнение сайта | 2023-06-16 17:00 → 2023-06-16 14:26 | 2023-07-10 15:00 → 2023-07-07 17:26 (-3d) |  |  | 0d → 5.22d | baseline start 2023-06-16 17:00 → 2023-06-16 14:26; baseline finish 2023-07-10 15:00 → 2023-07-07 17:26 |
| 26 | Тестирование сайта | 2023-07-03 15:00 → 2023-06-30 17:26 (-3d) | 2023-07-20 11:10 → 2023-07-19 11:15 (-1d) | 2.53w → 2.47w |  | 0d → 5.22d | baseline start 2023-07-03 15:00 → 2023-06-30 17:26; baseline finish 2023-07-20 11:10 → 2023-07-19 11:15 |
| 27 | Сдача сайта в эксплуатацию | 2023-07-20 11:10 → 2023-07-19 11:15 (-1d) | 2023-07-20 11:10 → 2023-07-19 11:15 (-1d) |  |  | 0d → 5.22d | baseline start 2023-07-20 11:10 → 2023-07-19 11:15; baseline finish 2023-07-20 11:10 → 2023-07-19 11:15 |
| 28 | **Совещание** |  | 2023-07-05 10:00 → 2023-07-19 10:00 (+14d) | 85d → 95d |  | 11.15d → 5.38d | baseline finish 2023-07-05 10:00 → 2023-07-19 10:00 |

## Version 3 (data date 2023-04-17, saved 2023-03-19, file lab04_01.mpp)

Note of the change: ADD: все фактические параметры кроме совещаний, но без выравнивания

Last finish 2023-07-26 → 2023-07-28 (+2d).

Changed:

| ID | Task | Start | Finish | Duration | Total float |
| --- | --- | --- | --- | --- | --- |
| 2 | **Создание интерфейса** |  | 2023-06-16 11:26 → 2023-06-27 16:37 (+11d) | 72.06d → 79.58d | 5.22d → 0d |
| 7 | Программирование интерфейса | 2023-06-05 16:26 → 2023-06-16 11:37 (+11d) | 2023-06-16 11:26 → 2023-06-27 16:37 (+11d) |  | 5.22d → 0d |
| 12 | **Создание ядра GIS** |  | 2023-06-05 16:26 → 2023-06-16 11:37 (+11d) | 64.56d → 72.08d | 5.22d → 0d |
| 14 | Создание модели ядра |  | 2023-04-06 14:49 → 2023-04-20 14:49 (+14d) | 2.02w → 2.72w | 5.22d → 0d |
| 15 | Тестирование модели ядра | 2023-04-06 14:49 → 2023-04-27 14:00 (+21d) | 2023-04-19 11:49 → 2023-04-28 16:00 (+9d) |  | 5.22d → 0d |
| 16 | Создание рабочей версии ядра | 2023-04-19 11:49 → 2023-04-28 16:00 (+9d) | 2023-06-05 16:26 → 2023-06-16 11:37 (+11d) | 6.09w → 6.12w | 5.22d → 0d |
| 17 | Создание мультимедиа-наполнения |  | 2023-05-31 17:00 → 2023-05-31 16:00 |  | 38.62d → 40.98d |
| 18 | Создание справочной системы | 2023-06-27 15:26 → 2023-07-07 10:37 (+10d) | 2023-07-11 17:26 → 2023-07-21 12:37 (+10d) |  | 5.35d → 5.28d |
| 19 | **Создание руководства пользователя** | 2023-06-01 11:26 → 2023-06-13 16:37 (+12d) | 2023-06-27 15:26 → 2023-07-07 10:37 (+10d) |  | 5.22d → 0d |
| 20 | Разработка дизайна руководства | 2023-06-01 11:26 → 2023-06-13 16:37 (+12d) | 2023-06-08 12:26 → 2023-06-20 17:37 (+12d) |  | 5.22d → 0d |
| 21 | Написание руководства пользователя | 2023-06-05 11:26 → 2023-06-15 16:37 (+10d) | 2023-06-27 15:26 → 2023-07-07 10:37 (+10d) |  | 5.22d → 0d |
| 22 | **Создание web-сайта и поддержки** | 2023-06-05 11:26 → 2023-06-15 16:37 (+10d) | 2023-07-07 17:26 → 2023-07-19 12:00 (+12d) | 23.62d → 23.55d | 5.22d → 0d |
| 23 | Разработка структуры сайта | 2023-06-05 11:26 → 2023-06-15 16:37 (+10d) | 2023-06-06 11:26 → 2023-06-16 16:37 (+10d) |  | 5.22d → 0d |
| 24 | Разработка дизайна сайта | 2023-06-06 11:26 → 2023-06-16 16:37 (+10d) | 2023-06-16 14:26 → 2023-06-28 09:37 (+12d) | 1.4w → 1.43w | 5.22d → 0d |
| 25 | Наполнение сайта | 2023-06-16 14:26 → 2023-06-28 10:00 (+12d) | 2023-07-07 17:26 → 2023-07-19 12:00 (+12d) |  | 5.22d → 0d |
| 26 | Тестирование сайта | 2023-06-30 17:26 → 2023-07-12 12:00 (+12d) | 2023-07-19 11:15 → 2023-07-28 15:49 (+9d) |  | 5.22d → 0d |
| 27 | Сдача сайта в эксплуатацию | 2023-07-19 11:15 → 2023-07-28 15:49 (+9d) | 2023-07-19 11:15 → 2023-07-28 15:49 (+9d) |  | 5.22d → 0d |

## Version 4 (saved 2023-03-19, file lab04.mpp)

Note of the change: FIX: удаленные совещания

Last finish stays 2023-07-28.

Changed:

| ID | Task | Duration |
| --- | --- | --- |
| 9 | Анализ и построение структуры базы объектов | 3.45w → 3.48w |

## Version 5 (data date 2023-04-17, saved 2023-03-19, file lab04_meetings.mpp)

Note of the change: FIX: удаленные совещания

Last finish stays 2023-07-28. Complete tasks 2 → 12.

Changed:

| ID | Task | Start | Finish | Duration | Complete | Total float | Other |
| --- | --- | --- | --- | --- | --- | --- | --- |
| 1 | Начало проекта | 2023-03-01 09:00 A | 2023-03-01 09:00 A |  | 0% → 100% | 10.25d → none |  |
| 2 | **Создание интерфейса** |  | 2023-06-27 16:37 → 2023-06-27 15:37 | 79.58d → 79.45d | 38% → 86% |  |  |
| 3 | **Разработка дизайна интерфейса** |  | 2023-04-13 18:00 A |  | 45% → 100% | 3.12d → none |  |
| 4 | Разработка 2D графических элементов | 2023-03-01 10:00 A | 2023-03-23 13:00 A |  | 0% → 100% | 18.62d → none |  |
| 5 | Разработка 3D графических элементов | 2023-03-01 10:00 A | 2023-03-16 12:00 A |  | 0% → 100% | 23.75d → none |  |
| 7 | Программирование интерфейса | 2023-06-16 11:37 → 2023-06-16 10:37 | 2023-06-27 16:37 → 2023-06-27 15:37 |  |  |  |  |
| 12 | **Создание ядра GIS** | 2023-03-01 10:00 A | 2023-06-16 11:37 → 2023-06-16 10:37 | 72.08d → 71.95d | 0% → 43% |  |  |
| 13 | Анализ и проектирование ядра | 2023-03-01 10:00 A | 2023-03-23 13:00 A |  | 0% → 100% | 0d → none |  |
| 14 | Создание модели ядра | 2023-03-23 14:00 A |  |  | 0% → 82% |  |  |
| 16 | Создание рабочей версии ядра |  | 2023-06-16 11:37 → 2023-06-16 10:37 | 6.12w → 6.09w |  |  |  |
| 17 | Создание мультимедиа-наполнения |  |  |  | 10% → 7% | 40.98d → 40.93d |  |
| 18 | Создание справочной системы | 2023-07-07 10:37 → 2023-07-07 09:37 | 2023-07-21 12:37 → 2023-07-21 11:37 |  |  | 5.28d → 5.35d |  |
| 19 | **Создание руководства пользователя** | 2023-06-13 16:37 → 2023-06-13 15:37 | 2023-07-07 10:37 → 2023-07-07 09:37 |  |  |  |  |
| 20 | Разработка дизайна руководства | 2023-06-13 16:37 → 2023-06-13 15:37 | 2023-06-20 17:37 → 2023-06-20 16:37 |  |  |  |  |
| 21 | Написание руководства пользователя | 2023-06-15 16:37 → 2023-06-15 15:37 | 2023-07-07 10:37 → 2023-07-07 09:37 |  |  |  |  |
| 22 | **Создание web-сайта и поддержки** | 2023-06-15 16:37 → 2023-06-15 15:37 | 2023-07-19 12:00 → 2023-07-19 11:37 | 23.55d → 23.62d |  |  |  |
| 23 | Разработка структуры сайта | 2023-06-15 16:37 → 2023-06-15 15:37 | 2023-06-16 16:37 → 2023-06-16 15:37 |  |  |  |  |
| 24 | Разработка дизайна сайта | 2023-06-16 16:37 → 2023-06-16 15:37 | 2023-06-28 09:37 → 2023-06-27 17:37 (-1d) |  |  |  |  |
| 25 | Наполнение сайта | 2023-06-28 10:00 → 2023-06-27 17:37 (-1d) | 2023-07-19 12:00 → 2023-07-19 11:37 |  |  |  |  |
| 26 | Тестирование сайта | 2023-07-12 12:00 → 2023-07-12 11:37 | 2023-07-28 15:49 → 2023-07-28 15:26 |  |  |  |  |
| 27 | Сдача сайта в эксплуатацию | 2023-07-28 15:49 → 2023-07-28 15:26 | 2023-07-28 15:49 → 2023-07-28 15:26 |  |  |  |  |
| 28 | **Совещание** | 2023-03-01 09:00 A |  |  | 0% → 30% | 7.6d → 7.56d |  |
| 29 | Совещание 1 | 2023-03-01 09:00 A | 2023-03-01 10:00 A |  | 0% → 100% | 102.48d → none | resources 3D аниматор; Web-дизайнер; Ведущий программист; Мультимедиа-корреспондент; Системный аналитик; Технический писатель; Художник-дизайнер → 3D аниматор; Ведущий программист; Системный аналитик; Художник-дизайнер |
| 30 | Совещание 2 | 2023-03-15 09:00 A | 2023-03-15 10:00 A |  | 0% → 100% | 93.6d → none | resources 3D аниматор; Web-дизайнер; Ведущий программист; Мультимедиа-корреспондент; Системный аналитик; Технический писатель; Художник-дизайнер → 3D аниматор; Ведущий программист; Системный аналитик; Художник-дизайнер |
| 31 | Совещание 3 | 2023-03-22 09:00 A | 2023-03-22 10:00 A |  | 0% → 100% | 88.6d → none | resources 3D аниматор; Web-дизайнер; Ведущий программист; Мультимедиа-корреспондент; Системный аналитик; Технический писатель; Художник-дизайнер → 3D аниматор; Ведущий программист; Системный аналитик; Художник-дизайнер |
| 32 | Совещание 4 | 2023-03-29 09:00 A | 2023-03-29 10:00 A |  | 0% → 100% | 83.6d → none | resources 3D аниматор; Web-дизайнер; Ведущий программист; Мультимедиа-корреспондент; Системный аналитик; Технический писатель; Художник-дизайнер → 3D аниматор; Ведущий программист; Системный аналитик |
| 33 | Совещание 5 | 2023-04-05 09:00 A | 2023-04-05 10:00 A |  | 0% → 100% | 78.6d → none | resources 3D аниматор; Web-дизайнер; Ведущий программист; Мультимедиа-корреспондент; Системный аналитик; Технический писатель; Художник-дизайнер → 3D аниматор; Мультимедиа-корреспондент; Системный аналитик |
| 34 | Совещание 6 | 2023-04-12 09:00 A | 2023-04-12 10:00 A |  | 0% → 100% | 73.6d → none | resources 3D аниматор; Web-дизайнер; Ведущий программист; Мультимедиа-корреспондент; Системный аналитик; Технический писатель; Художник-дизайнер → 3D аниматор; Мультимедиа-корреспондент; Системный аналитик |
| 35 | Совещание 7 |  |  |  |  | 68.6d → 68.56d | resources 3D аниматор; Web-дизайнер; Ведущий программист; Мультимедиа-корреспондент; Системный аналитик; Технический писатель; Художник-дизайнер → Ведущий программист; Мультимедиа-корреспондент |
| 36 | Совещание 8 |  |  |  |  | 63.6d → 63.56d | resources 3D аниматор; Web-дизайнер; Ведущий программист; Мультимедиа-корреспондент; Системный аналитик; Технический писатель; Художник-дизайнер → Ведущий программист; Мультимедиа-корреспондент |
| 37 | Совещание 9 |  |  |  |  | 59.6d → 59.56d | resources 3D аниматор; Web-дизайнер; Ведущий программист; Мультимедиа-корреспондент; Системный аналитик; Технический писатель; Художник-дизайнер → Ведущий программист; Мультимедиа-корреспондент |
| 38 | Совещание 10 |  |  |  |  | 56.6d → 56.56d | resources 3D аниматор; Web-дизайнер; Ведущий программист; Мультимедиа-корреспондент; Системный аналитик; Технический писатель; Художник-дизайнер → Ведущий программист; Мультимедиа-корреспондент |
| 39 | Совещание 11 |  |  |  |  | 51.6d → 51.56d | resources 3D аниматор; Web-дизайнер; Ведущий программист; Мультимедиа-корреспондент; Системный аналитик; Технический писатель; Художник-дизайнер → Ведущий программист; Мультимедиа-корреспондент |
| 40 | Совещание 12 |  |  |  |  | 46.6d → 46.56d | resources 3D аниматор; Web-дизайнер; Ведущий программист; Мультимедиа-корреспондент; Системный аналитик; Технический писатель; Художник-дизайнер → Ведущий программист; Мультимедиа-корреспондент |
| 41 | Совещание 13 |  |  |  |  | 41.6d → 41.56d | resources 3D аниматор; Web-дизайнер; Ведущий программист; Мультимедиа-корреспондент; Системный аналитик; Технический писатель; Художник-дизайнер → Ведущий программист; Мультимедиа-корреспондент; Художник-дизайнер |
| 42 | Совещание 14 |  |  |  |  | 36.6d → 36.56d | resources 3D аниматор; Web-дизайнер; Ведущий программист; Мультимедиа-корреспондент; Системный аналитик; Технический писатель; Художник-дизайнер → 3D аниматор; Web-дизайнер; Ведущий программист; Технический писатель; Художник-дизайнер |
| 43 | Совещание 15 |  |  |  |  | 32.6d → 32.56d | resources 3D аниматор; Web-дизайнер; Ведущий программист; Мультимедиа-корреспондент; Системный аналитик; Технический писатель; Художник-дизайнер → 3D аниматор; Web-дизайнер; Технический писатель; Художник-дизайнер |
| 44 | Совещание 16 |  |  |  |  | 27.6d → 27.56d | resources 3D аниматор; Web-дизайнер; Ведущий программист; Мультимедиа-корреспондент; Системный аналитик; Технический писатель; Художник-дизайнер → 3D аниматор; Web-дизайнер; Технический писатель; Художник-дизайнер |
| 45 | Совещание 17 |  |  |  |  | 22.6d → 22.56d | resources 3D аниматор; Web-дизайнер; Ведущий программист; Мультимедиа-корреспондент; Системный аналитик; Технический писатель; Художник-дизайнер → Web-дизайнер; Ведущий программист; Технический писатель |
| 46 | Совещание 18 |  |  |  |  | 17.6d → 17.56d | resources 3D аниматор; Web-дизайнер; Ведущий программист; Мультимедиа-корреспондент; Системный аналитик; Технический писатель; Художник-дизайнер → Web-дизайнер; Ведущий программист; Технический писатель |
| 47 | Совещание 19 |  |  |  |  | 12.6d → 12.56d | resources 3D аниматор; Web-дизайнер; Ведущий программист; Мультимедиа-корреспондент; Системный аналитик; Технический писатель; Художник-дизайнер → Web-дизайнер; Ведущий программист; Технический писатель |
| 48 | Совещание 20 |  |  |  |  | 7.6d → 7.56d | resources 3D аниматор; Web-дизайнер; Ведущий программист; Мультимедиа-корреспондент; Системный аналитик; Технический писатель; Художник-дизайнер → Ведущий программист; Технический писатель |

## Version 6 (data date 2023-04-17, saved 2023-03-20, file lab04_meetings.mpp)

Note of the change: FIX: пробное сокращение сроков

Last finish stays 2023-07-28.

Changed:

| ID | Task | Finish | Total float |
| --- | --- | --- | --- |
| 17 | Создание мультимедиа-наполнения | 2023-05-31 16:00 → 2023-05-31 17:00 | 40.93d → 40.81d |

## Version 7 (data date 2023-04-17, saved 2023-03-27, file lab04_task01.mpp)

Note of the change: Merge pull request #4 from MyMiDiII/lab04

Last finish 2023-07-28 → 2023-07-19 (-9d). Complete tasks 12 → 0.

Changed:

| ID | Task | Start | Finish | Duration | Complete | Total float | Other |
| --- | --- | --- | --- | --- | --- | --- | --- |
| 1 | Начало проекта | 2023-03-01 09:00 A → 2023-03-01 09:00 | 2023-03-01 09:00 A → 2023-03-01 09:00 |  | 100% → 0% | none → 38.78d |  |
| 2 | **Создание интерфейса** | 2023-03-01 10:00 A → 2023-03-01 10:00 | 2023-06-27 15:37 → 2023-06-16 11:26 (-11d) | 79.45d → 72.06d | 86% → 0% |  |  |
| 3 | **Разработка дизайна интерфейса** | 2023-03-01 10:00 A → 2023-03-01 10:00 | 2023-04-13 18:00 A → 2023-04-06 16:00 (-7d) | 30.75d → 25.5d | 100% → 0% | none → 38.66d |  |
| 4 | Разработка 2D графических элементов | 2023-03-01 10:00 A → 2023-03-01 10:00 | 2023-03-23 13:00 A → 2023-03-23 13:00 |  | 100% → 0% | none → 38.66d |  |
| 5 | Разработка 3D графических элементов | 2023-03-01 10:00 A → 2023-03-01 10:00 | 2023-03-16 12:00 A → 2023-03-16 12:00 |  | 100% → 0% | none → 38.66d |  |
| 6 | Создание заставки | 2023-03-16 12:00 A → 2023-03-16 12:00 | 2023-04-13 18:00 A → 2023-04-06 16:00 (-7d) | 4.05w → 3w | 100% → 0% | none → 38.66d |  |
| 7 | Программирование интерфейса | 2023-06-16 10:37 → 2023-06-05 16:26 (-11d) | 2023-06-27 15:37 → 2023-06-16 11:26 (-11d) |  |  |  |  |
| 8 | **Построение базы объектов** | 2023-03-23 14:00 A → 2023-03-23 14:00 | 2023-07-26 13:00 → 2023-07-17 11:00 (-9d) | 85d → 77.75d | 20% → 0% | 2.18d → 2.03d |  |
| 9 | Анализ и построение структуры базы объектов | 2023-03-23 14:00 A → 2023-03-23 14:00 | 2023-04-17 18:00 A → 2023-04-06 16:00 (-11d) | 3.48w → 2w | 100% → 0% | none → 2.03d |  |
| 10 | Программирование средств обработки базы объектов | 2023-04-18 09:00 → 2023-04-06 16:00 (-12d) | 2023-04-27 13:00 → 2023-04-18 11:00 (-9d) |  |  | 2.18d → 2.03d |  |
| 11 | Наполнение базы объектов | 2023-04-27 14:00 → 2023-04-18 11:00 (-9d) | 2023-07-26 13:00 → 2023-07-17 11:00 (-9d) |  |  | 2.18d → 2.03d |  |
| 12 | **Создание ядра GIS** | 2023-03-01 10:00 A → 2023-03-01 10:00 | 2023-06-16 10:37 → 2023-06-05 16:26 (-11d) | 71.95d → 64.56d | 43% → 0% |  |  |
| 13 | Анализ и проектирование ядра | 2023-03-01 10:00 A → 2023-03-01 10:00 | 2023-03-23 13:00 A → 2023-03-23 13:00 |  | 100% → 0% | none → 0d |  |
| 14 | Создание модели ядра | 2023-03-23 14:00 A → 2023-03-23 14:00 | 2023-04-20 14:49 → 2023-04-06 14:49 (-14d) | 2.72w → 2.02w | 82% → 0% |  |  |
| 15 | Тестирование модели ядра | 2023-04-27 14:00 → 2023-04-06 14:49 (-21d) | 2023-04-28 16:00 → 2023-04-19 11:49 (-9d) |  |  |  |  |
| 16 | Создание рабочей версии ядра | 2023-04-28 16:00 → 2023-04-19 11:49 (-9d) | 2023-06-16 10:37 → 2023-06-05 16:26 (-11d) |  |  |  |  |
| 17 | Создание мультимедиа-наполнения | 2023-04-14 09:00 A → 2023-04-06 16:00 (-8d) | 2023-05-31 17:00 → 2023-05-24 15:00 (-7d) |  | 7% → 0% | 40.81d → 38.66d |  |
| 18 | Создание справочной системы | 2023-07-07 09:37 → 2023-06-27 15:26 (-10d) | 2023-07-21 11:37 → 2023-07-11 17:26 (-10d) |  |  |  |  |
| 19 | **Создание руководства пользователя** | 2023-06-13 15:37 → 2023-06-01 11:26 (-12d) | 2023-07-07 09:37 → 2023-06-27 15:26 (-10d) |  |  |  |  |
| 20 | Разработка дизайна руководства | 2023-06-13 15:37 → 2023-06-01 11:26 (-12d) | 2023-06-20 16:37 → 2023-06-08 12:26 (-12d) |  |  |  |  |
| 21 | Написание руководства пользователя | 2023-06-15 15:37 → 2023-06-05 11:26 (-10d) | 2023-07-07 09:37 → 2023-06-27 15:26 (-10d) |  |  |  |  |
| 22 | **Создание web-сайта и поддержки** | 2023-06-15 15:37 → 2023-06-05 11:26 (-10d) | 2023-07-19 11:37 → 2023-07-07 17:26 (-12d) |  |  |  |  |
| 23 | Разработка структуры сайта | 2023-06-15 15:37 → 2023-06-05 11:26 (-10d) | 2023-06-16 15:37 → 2023-06-06 11:26 (-10d) |  |  |  |  |
| 24 | Разработка дизайна сайта | 2023-06-16 15:37 → 2023-06-06 11:26 (-10d) | 2023-06-27 17:37 → 2023-06-16 14:26 (-11d) | 1.43w → 1.4w |  |  |  |
| 25 | Наполнение сайта | 2023-06-27 17:37 → 2023-06-16 14:26 (-11d) | 2023-07-19 11:37 → 2023-07-07 17:26 (-12d) |  |  |  |  |
| 26 | Тестирование сайта | 2023-07-12 11:37 → 2023-06-30 17:26 (-12d) | 2023-07-28 15:26 → 2023-07-19 11:15 (-9d) |  |  |  |  |
| 27 | Сдача сайта в эксплуатацию | 2023-07-28 15:26 → 2023-07-19 11:15 (-9d) | 2023-07-28 15:26 → 2023-07-19 11:15 (-9d) |  |  |  |  |
| 28 | **Совещание** | 2023-03-01 09:00 A → 2023-03-01 09:00 |  |  | 30% → 0% | 7.56d → 0.16d |  |
| 29 | Совещание 1 | 2023-03-01 09:00 A → 2023-03-01 09:00 | 2023-03-01 10:00 A → 2023-03-01 10:00 |  | 100% → 0% | none → 95.03d | resources 3D аниматор; Ведущий программист; Системный аналитик; Художник-дизайнер → 3D аниматор; Web-дизайнер; Ведущий программист; Мультимедиа-корреспондент; Системный аналитик; Технический писатель; Художник-дизайнер |
| 30 | Совещание 2 | 2023-03-15 09:00 A → 2023-03-15 09:00 | 2023-03-15 10:00 A → 2023-03-15 10:00 |  | 100% → 0% | none → 86.16d | resources 3D аниматор; Ведущий программист; Системный аналитик; Художник-дизайнер → 3D аниматор; Web-дизайнер; Ведущий программист; Мультимедиа-корреспондент; Системный аналитик; Технический писатель; Художник-дизайнер |
| 31 | Совещание 3 | 2023-03-22 09:00 A → 2023-03-22 09:00 | 2023-03-22 10:00 A → 2023-03-22 10:00 |  | 100% → 0% | none → 81.16d | resources 3D аниматор; Ведущий программист; Системный аналитик; Художник-дизайнер → 3D аниматор; Web-дизайнер; Ведущий программист; Мультимедиа-корреспондент; Системный аналитик; Технический писатель; Художник-дизайнер |
| 32 | Совещание 4 | 2023-03-29 09:00 A → 2023-03-29 09:00 | 2023-03-29 10:00 A → 2023-03-29 10:00 |  | 100% → 0% | none → 76.16d | resources 3D аниматор; Ведущий программист; Системный аналитик → 3D аниматор; Web-дизайнер; Ведущий программист; Мультимедиа-корреспондент; Системный аналитик; Технический писатель; Художник-дизайнер |
| 33 | Совещание 5 | 2023-04-05 09:00 A → 2023-04-05 09:00 | 2023-04-05 10:00 A → 2023-04-05 10:00 |  | 100% → 0% | none → 71.16d | resources 3D аниматор; Мультимедиа-корреспондент; Системный аналитик → 3D аниматор; Web-дизайнер; Ведущий программист; Мультимедиа-корреспондент; Системный аналитик; Технический писатель; Художник-дизайнер |
| 34 | Совещание 6 | 2023-04-12 09:00 A → 2023-04-12 09:00 | 2023-04-12 10:00 A → 2023-04-12 10:00 |  | 100% → 0% | none → 66.16d | resources 3D аниматор; Мультимедиа-корреспондент; Системный аналитик → 3D аниматор; Web-дизайнер; Ведущий программист; Мультимедиа-корреспондент; Системный аналитик; Технический писатель; Художник-дизайнер |
| 35 | Совещание 7 |  |  |  |  | 68.56d → 61.16d | resources Ведущий программист; Мультимедиа-корреспондент → 3D аниматор; Web-дизайнер; Ведущий программист; Мультимедиа-корреспондент; Системный аналитик; Технический писатель; Художник-дизайнер |
| 36 | Совещание 8 |  |  |  |  | 63.56d → 56.16d | resources Ведущий программист; Мультимедиа-корреспондент → 3D аниматор; Web-дизайнер; Ведущий программист; Мультимедиа-корреспондент; Системный аналитик; Технический писатель; Художник-дизайнер |
| 37 | Совещание 9 |  |  |  |  | 59.56d → 52.16d | resources Ведущий программист; Мультимедиа-корреспондент → 3D аниматор; Web-дизайнер; Ведущий программист; Мультимедиа-корреспондент; Системный аналитик; Технический писатель; Художник-дизайнер |
| 38 | Совещание 10 |  |  |  |  | 56.56d → 49.16d | resources Ведущий программист; Мультимедиа-корреспондент → 3D аниматор; Web-дизайнер; Ведущий программист; Мультимедиа-корреспондент; Системный аналитик; Технический писатель; Художник-дизайнер |
| 39 | Совещание 11 |  |  |  |  | 51.56d → 44.16d | resources Ведущий программист; Мультимедиа-корреспондент → 3D аниматор; Web-дизайнер; Ведущий программист; Мультимедиа-корреспондент; Системный аналитик; Технический писатель; Художник-дизайнер |
| 40 | Совещание 12 |  |  |  |  | 46.56d → 39.16d | resources Ведущий программист; Мультимедиа-корреспондент → 3D аниматор; Web-дизайнер; Ведущий программист; Мультимедиа-корреспондент; Системный аналитик; Технический писатель; Художник-дизайнер |
| 41 | Совещание 13 |  |  |  |  | 41.56d → 34.16d | resources Ведущий программист; Мультимедиа-корреспондент; Художник-дизайнер → 3D аниматор; Web-дизайнер; Ведущий программист; Мультимедиа-корреспондент; Системный аналитик; Технический писатель; Художник-дизайнер |
| 42 | Совещание 14 |  |  |  |  | 36.56d → 29.16d | resources 3D аниматор; Web-дизайнер; Ведущий программист; Технический писатель; Художник-дизайнер → 3D аниматор; Web-дизайнер; Ведущий программист; Мультимедиа-корреспондент; Системный аналитик; Технический писатель; Художник-дизайнер |
| 43 | Совещание 15 |  |  |  |  | 32.56d → 25.16d | resources 3D аниматор; Web-дизайнер; Технический писатель; Художник-дизайнер → 3D аниматор; Web-дизайнер; Ведущий программист; Мультимедиа-корреспондент; Системный аналитик; Технический писатель; Художник-дизайнер |
| 44 | Совещание 16 |  |  |  |  | 27.56d → 20.16d | resources 3D аниматор; Web-дизайнер; Технический писатель; Художник-дизайнер → 3D аниматор; Web-дизайнер; Ведущий программист; Мультимедиа-корреспондент; Системный аналитик; Технический писатель; Художник-дизайнер |
| 45 | Совещание 17 |  |  |  |  | 22.56d → 15.16d | resources Web-дизайнер; Ведущий программист; Технический писатель → 3D аниматор; Web-дизайнер; Ведущий программист; Мультимедиа-корреспондент; Системный аналитик; Технический писатель; Художник-дизайнер |
| 46 | Совещание 18 |  |  |  |  | 17.56d → 10.16d | resources Web-дизайнер; Ведущий программист; Технический писатель → 3D аниматор; Web-дизайнер; Ведущий программист; Мультимедиа-корреспондент; Системный аналитик; Технический писатель; Художник-дизайнер |
| 47 | Совещание 19 |  |  |  |  | 12.56d → 5.16d | resources Web-дизайнер; Ведущий программист; Технический писатель → 3D аниматор; Web-дизайнер; Ведущий программист; Мультимедиа-корреспондент; Системный аналитик; Технический писатель; Художник-дизайнер |
| 48 | Совещание 20 |  |  |  |  | 7.56d → 0.16d | resources Ведущий программист; Технический писатель → 3D аниматор; Web-дизайнер; Ведущий программист; Мультимедиа-корреспондент; Системный аналитик; Технический писатель; Художник-дизайнер |

## Version 8 (data date 2023-04-17, saved 2023-03-27, file lab04_task02.mpp)

Note of the change: ADD: полная лр4 без отчета

Last finish 2023-07-19 → 2023-07-28 (+9d). Complete tasks 0 → 12.

Changed:

| ID | Task | Start | Finish | Duration | Complete | Total float | Other |
| --- | --- | --- | --- | --- | --- | --- | --- |
| 1 | Начало проекта | 2023-03-01 09:00 A | 2023-03-01 09:00 A |  | 0% → 100% | 38.78d → none |  |
| 2 | **Создание интерфейса** | 2023-03-01 10:00 A | 2023-06-16 11:26 → 2023-06-27 16:37 (+11d) | 72.06d → 79.58d | 0% → 86% |  |  |
| 3 | **Разработка дизайна интерфейса** | 2023-03-01 10:00 A | 2023-04-06 16:00 → 2023-04-13 16:00 A (+7d) | 25.5d → 30.5d | 0% → 100% | 38.66d → none |  |
| 4 | Разработка 2D графических элементов | 2023-03-01 10:00 A | 2023-03-23 13:00 A |  | 0% → 100% | 38.66d → none |  |
| 5 | Разработка 3D графических элементов | 2023-03-01 10:00 A | 2023-03-16 12:00 A |  | 0% → 100% | 38.66d → none |  |
| 6 | Создание заставки | 2023-03-16 12:00 A | 2023-04-06 16:00 → 2023-04-13 16:00 A (+7d) | 3w → 4w | 0% → 100% | 38.66d → none |  |
| 7 | Программирование интерфейса | 2023-06-05 16:26 → 2023-06-16 11:37 (+11d) | 2023-06-16 11:26 → 2023-06-27 16:37 (+11d) |  |  |  |  |
| 8 | **Построение базы объектов** | 2023-03-23 14:00 A | 2023-07-17 11:00 → 2023-07-26 13:00 (+9d) | 77.75d → 85d | 0% → 20% | 2.03d → 2.23d |  |
| 9 | Анализ и построение структуры базы объектов | 2023-03-23 14:00 A | 2023-04-06 16:00 → 2023-04-17 18:00 A (+11d) | 2w → 3.45w | 0% → 100% | 2.03d → none |  |
| 10 | Программирование средств обработки базы объектов | 2023-04-06 16:00 → 2023-04-18 09:00 (+12d) | 2023-04-18 11:00 → 2023-04-27 13:00 (+9d) |  |  | 2.03d → 2.23d |  |
| 11 | Наполнение базы объектов | 2023-04-18 11:00 → 2023-04-27 14:00 (+9d) | 2023-07-17 11:00 → 2023-07-26 13:00 (+9d) |  |  | 2.03d → 2.23d |  |
| 12 | **Создание ядра GIS** | 2023-03-01 10:00 A | 2023-06-05 16:26 → 2023-06-16 11:37 (+11d) | 64.56d → 72.08d | 0% → 43% |  |  |
| 13 | Анализ и проектирование ядра | 2023-03-01 10:00 A | 2023-03-23 13:00 A |  | 0% → 100% | 0d → none |  |
| 14 | Создание модели ядра | 2023-03-23 14:00 A | 2023-04-06 14:49 → 2023-04-20 14:49 (+14d) | 2.02w → 2.72w | 0% → 82% |  |  |
| 15 | Тестирование модели ядра | 2023-04-06 14:49 → 2023-04-27 14:00 (+21d) | 2023-04-19 11:49 → 2023-04-28 16:00 (+9d) |  |  |  |  |
| 16 | Создание рабочей версии ядра | 2023-04-19 11:49 → 2023-04-28 16:00 (+9d) | 2023-06-05 16:26 → 2023-06-16 11:37 (+11d) | 6.09w → 6.12w |  |  |  |
| 17 | Создание мультимедиа-наполнения | 2023-04-06 16:00 → 2023-04-13 16:00 A (+7d) | 2023-05-24 15:00 → 2023-05-31 13:00 (+7d) |  | 0% → 10% | 38.66d → 41.23d |  |
| 18 | Создание справочной системы | 2023-06-27 15:26 → 2023-07-07 10:37 (+10d) | 2023-07-11 17:26 → 2023-07-21 12:37 (+10d) |  |  | 5.35d → 5.28d |  |
| 19 | **Создание руководства пользователя** | 2023-06-01 11:26 → 2023-06-13 16:37 (+12d) | 2023-06-27 15:26 → 2023-07-07 10:37 (+10d) |  |  |  |  |
| 20 | Разработка дизайна руководства | 2023-06-01 11:26 → 2023-06-13 16:37 (+12d) | 2023-06-08 12:26 → 2023-06-20 17:37 (+12d) |  |  |  |  |
| 21 | Написание руководства пользователя | 2023-06-05 11:26 → 2023-06-15 16:37 (+10d) | 2023-06-27 15:26 → 2023-07-07 10:37 (+10d) |  |  |  |  |
| 22 | **Создание web-сайта и поддержки** | 2023-06-05 11:26 → 2023-06-15 16:37 (+10d) | 2023-07-07 17:26 → 2023-07-19 12:00 (+12d) | 23.62d → 23.55d |  |  |  |
| 23 | Разработка структуры сайта | 2023-06-05 11:26 → 2023-06-15 16:37 (+10d) | 2023-06-06 11:26 → 2023-06-16 16:37 (+10d) |  |  |  |  |
| 24 | Разработка дизайна сайта | 2023-06-06 11:26 → 2023-06-16 16:37 (+10d) | 2023-06-16 14:26 → 2023-06-28 09:37 (+12d) | 1.4w → 1.43w |  |  |  |
| 25 | Наполнение сайта | 2023-06-16 14:26 → 2023-06-28 10:00 (+12d) | 2023-07-07 17:26 → 2023-07-19 12:00 (+12d) |  |  |  |  |
| 26 | Тестирование сайта | 2023-06-30 17:26 → 2023-07-12 12:00 (+12d) | 2023-07-19 11:15 → 2023-07-28 15:49 (+9d) |  |  |  |  |
| 27 | Сдача сайта в эксплуатацию | 2023-07-19 11:15 → 2023-07-28 15:49 (+9d) | 2023-07-19 11:15 → 2023-07-28 15:49 (+9d) |  |  |  |  |
| 28 | **Совещание** | 2023-03-01 09:00 A |  |  | 0% → 30% | 0.16d → 7.6d |  |
| 29 | Совещание 1 | 2023-03-01 09:00 A | 2023-03-01 10:00 A |  | 0% → 100% | 95.03d → none |  |
| 30 | Совещание 2 | 2023-03-15 09:00 A | 2023-03-15 10:00 A |  | 0% → 100% | 86.16d → none |  |
| 31 | Совещание 3 | 2023-03-22 09:00 A | 2023-03-22 10:00 A |  | 0% → 100% | 81.16d → none |  |
| 32 | Совещание 4 | 2023-03-29 09:00 A | 2023-03-29 10:00 A |  | 0% → 100% | 76.16d → none |  |
| 33 | Совещание 5 | 2023-04-05 09:00 A | 2023-04-05 10:00 A |  | 0% → 100% | 71.16d → none | resources 3D аниматор; Web-дизайнер; Ведущий программист; Мультимедиа-корреспондент; Системный аналитик; Технический писатель; Художник-дизайнер → 3D аниматор; Web-дизайнер; Мультимедиа-корреспондент; Системный аналитик; Технический писатель; Художник-дизайнер |
| 34 | Совещание 6 | 2023-04-12 09:00 A | 2023-04-12 10:00 A |  | 0% → 100% | 66.16d → none | resources 3D аниматор; Web-дизайнер; Ведущий программист; Мультимедиа-корреспондент; Системный аналитик; Технический писатель; Художник-дизайнер → 3D аниматор; Web-дизайнер; Мультимедиа-корреспондент; Системный аналитик; Технический писатель; Художник-дизайнер |

## Version 9 (data date 2023-04-17, saved 2023-03-28, file lab04_task02_meet.mpp)

Note of the change: ADD: полная лр4 без отчета

Last finish stays 2023-07-28.

Changed:

| ID | Task | Other |
| --- | --- | --- |
| 34 | Совещание 6 | resources 3D аниматор; Web-дизайнер; Мультимедиа-корреспондент; Системный аналитик; Технический писатель; Художник-дизайнер → 3D аниматор; Мультимедиа-корреспондент; Системный аналитик |
| 35 | Совещание 7 | resources 3D аниматор; Web-дизайнер; Ведущий программист; Мультимедиа-корреспондент; Системный аналитик; Технический писатель; Художник-дизайнер → Ведущий программист; Мультимедиа-корреспондент |
| 36 | Совещание 8 | resources 3D аниматор; Web-дизайнер; Ведущий программист; Мультимедиа-корреспондент; Системный аналитик; Технический писатель; Художник-дизайнер → Ведущий программист; Мультимедиа-корреспондент |
| 37 | Совещание 9 | resources 3D аниматор; Web-дизайнер; Ведущий программист; Мультимедиа-корреспондент; Системный аналитик; Технический писатель; Художник-дизайнер → Ведущий программист; Мультимедиа-корреспондент |
| 38 | Совещание 10 | resources 3D аниматор; Web-дизайнер; Ведущий программист; Мультимедиа-корреспондент; Системный аналитик; Технический писатель; Художник-дизайнер → Ведущий программист; Мультимедиа-корреспондент |
| 39 | Совещание 11 | resources 3D аниматор; Web-дизайнер; Ведущий программист; Мультимедиа-корреспондент; Системный аналитик; Технический писатель; Художник-дизайнер → Ведущий программист; Мультимедиа-корреспондент |
| 40 | Совещание 12 | resources 3D аниматор; Web-дизайнер; Ведущий программист; Мультимедиа-корреспондент; Системный аналитик; Технический писатель; Художник-дизайнер → Ведущий программист; Мультимедиа-корреспондент |
| 41 | Совещание 13 | resources 3D аниматор; Web-дизайнер; Ведущий программист; Мультимедиа-корреспондент; Системный аналитик; Технический писатель; Художник-дизайнер → Ведущий программист; Мультимедиа-корреспондент; Художник-дизайнер |
| 42 | Совещание 14 | resources 3D аниматор; Web-дизайнер; Ведущий программист; Мультимедиа-корреспондент; Системный аналитик; Технический писатель; Художник-дизайнер → 3D аниматор; Web-дизайнер; Ведущий программист; Технический писатель; Художник-дизайнер |
| 43 | Совещание 15 | resources 3D аниматор; Web-дизайнер; Ведущий программист; Мультимедиа-корреспондент; Системный аналитик; Технический писатель; Художник-дизайнер → 3D аниматор; Web-дизайнер; Ведущий программист; Технический писатель; Художник-дизайнер |
| 44 | Совещание 16 | resources 3D аниматор; Web-дизайнер; Ведущий программист; Мультимедиа-корреспондент; Системный аналитик; Технический писатель; Художник-дизайнер → 3D аниматор; Web-дизайнер; Технический писатель; Художник-дизайнер |
| 45 | Совещание 17 | resources 3D аниматор; Web-дизайнер; Ведущий программист; Мультимедиа-корреспондент; Системный аналитик; Технический писатель; Художник-дизайнер → Web-дизайнер; Технический писатель; Художник-дизайнер |
| 46 | Совещание 18 | resources 3D аниматор; Web-дизайнер; Ведущий программист; Мультимедиа-корреспондент; Системный аналитик; Технический писатель; Художник-дизайнер → Web-дизайнер; Ведущий программист; Технический писатель |
| 47 | Совещание 19 | resources 3D аниматор; Web-дизайнер; Ведущий программист; Мультимедиа-корреспондент; Системный аналитик; Технический писатель; Художник-дизайнер → Web-дизайнер; Ведущий программист; Технический писатель |
| 48 | Совещание 20 | resources 3D аниматор; Web-дизайнер; Ведущий программист; Мультимедиа-корреспондент; Системный аналитик; Технический писатель; Художник-дизайнер → Web-дизайнер; Ведущий программист; Технический писатель |

## Version 10 (data date 2023-04-17, saved 2023-03-28, file lab04_task05.mpp)

Note of the change: Merge pull request #4 from MyMiDiII/lab04

Last finish 2023-07-28 → 2023-07-19 (-9d).

Changed:

| ID | Task | Start | Finish | Duration | Complete | Total float | Other |
| --- | --- | --- | --- | --- | --- | --- | --- |
| 2 | **Создание интерфейса** |  | 2023-06-27 16:37 → 2023-06-20 14:19 (-7d) | 79.58d → 74.29d |  |  |  |
| 7 | Программирование интерфейса | 2023-06-16 11:37 → 2023-06-08 09:19 (-8d) | 2023-06-27 16:37 → 2023-06-20 14:19 (-7d) |  |  |  |  |
| 8 | **Построение базы объектов** |  | 2023-07-26 13:00 → 2023-07-13 16:00 (-13d) | 85d → 76.25d | 20% → 23% | 2.23d → 3.66d |  |
| 10 | Программирование средств обработки базы объектов |  | 2023-04-27 13:00 → 2023-04-28 16:00 (+1d) |  |  | 2.23d → 3.66d |  |
| 11 | Наполнение базы объектов | 2023-04-27 14:00 → 2023-04-28 16:00 (+1d) | 2023-07-26 13:00 → 2023-07-13 16:00 (-13d) | 12w → 10w |  | 2.23d → 3.66d | resources Наборщик данных #1; Наборщик данных #5; Наборщик данных #2; Наборщик данных #3; Наборщик данных #4 → Наборщик данных #1; Наборщик данных #5; Наборщик данных #2; Наборщик данных #3; Наборщик данных #4; Наборщик данных #6 |
| 12 | **Создание ядра GIS** |  | 2023-06-16 11:37 → 2023-06-08 09:19 (-8d) | 72.08d → 66.79d |  |  |  |
| 15 | Тестирование модели ядра | 2023-04-27 14:00 → 2023-04-20 14:49 (-7d) | 2023-04-28 16:00 → 2023-04-21 16:49 (-7d) |  |  |  |  |
| 16 | Создание рабочей версии ядра | 2023-04-28 16:00 → 2023-04-21 16:49 (-7d) | 2023-06-16 11:37 → 2023-06-08 09:19 (-8d) | 6.12w → 6.04w |  |  | resources Программист #1; Ведущий программист; Программист #2; Программист #3; Программист #4 → Программист #1; Ведущий программист; Программист #2; Программист #3; Программист #4; Программист #5 |
| 18 | Создание справочной системы | 2023-07-07 10:37 → 2023-06-29 17:19 (-8d) | 2023-07-21 12:37 → 2023-07-14 10:19 (-7d) |  |  | 5.28d → 3.24d |  |
| 19 | **Создание руководства пользователя** | 2023-06-13 16:37 → 2023-06-05 14:19 (-8d) | 2023-07-07 10:37 → 2023-06-29 17:19 (-8d) |  |  |  |  |
| 20 | Разработка дизайна руководства | 2023-06-13 16:37 → 2023-06-05 14:19 (-8d) | 2023-06-20 17:37 → 2023-06-13 15:19 (-7d) |  |  |  |  |
| 21 | Написание руководства пользователя | 2023-06-15 16:37 → 2023-06-07 14:19 (-8d) | 2023-07-07 10:37 → 2023-06-29 17:19 (-8d) |  |  |  |  |
| 22 | **Создание web-сайта и поддержки** | 2023-06-15 16:37 → 2023-06-07 14:19 (-8d) | 2023-07-19 12:00 → 2023-07-12 10:19 (-7d) | 23.55d → 23.62d |  |  |  |
| 23 | Разработка структуры сайта | 2023-06-15 16:37 → 2023-06-07 14:19 (-8d) | 2023-06-16 16:37 → 2023-06-08 14:19 (-8d) |  |  |  |  |
| 24 | Разработка дизайна сайта | 2023-06-16 16:37 → 2023-06-08 14:19 (-8d) | 2023-06-28 09:37 → 2023-06-20 16:19 (-8d) |  |  |  |  |
| 25 | Наполнение сайта | 2023-06-28 10:00 → 2023-06-20 16:19 (-8d) | 2023-07-19 12:00 → 2023-07-12 10:19 (-7d) |  |  |  |  |
| 26 | Тестирование сайта | 2023-07-12 12:00 → 2023-07-05 10:19 (-7d) | 2023-07-28 15:49 → 2023-07-19 12:16 (-9d) | 2.47w → 2.05w |  |  | resources Программист #1; Ведущий программист; Программист #2; Программист #3; Программист #4 → Программист #1; Ведущий программист; Программист #2; Программист #3; Программист #4; Программист #5 |
| 27 | Сдача сайта в эксплуатацию | 2023-07-28 15:49 → 2023-07-19 12:16 (-9d) | 2023-07-28 15:49 → 2023-07-19 12:16 (-9d) |  |  |  |  |
