# Разработка карты города

How a schedule from MS Project changed from version to version. A marks actual dates.

## Version 1 (data date 2023-04-17, saved 2023-04-01, file lab05-task01-04.mpp)

Note of the change: Merge pull request #6 from MyMiDiII/lab05

| ID | WBS | Task | Duration | Start | Finish | Predecessors | Complete | Total float | Constraint |
| --- | --- | --- | --- | --- | --- | --- | --- | --- | --- |
| 1 |  | Начало проекта | 0w | 2023-03-01 09:00 A | 2023-03-01 09:00 A |  | 100% |  |  |
| 2 | 2 | **Создание интерфейса** | 79.58d | 2023-03-01 10:00 A | 2023-06-27 16:37 | 1 | 86% | 0d |  |
| 3 | 2.1 | **Разработка дизайна интерфейса** | 30.5d | 2023-03-01 10:00 A | 2023-04-13 16:00 A |  | 100% |  |  |
| 4 |  | Разработка 2D графических элементов | 3w | 2023-03-01 10:00 A | 2023-03-23 13:00 A |  | 100% |  |  |
| 5 |  | Разработка 3D графических элементов | 2w | 2023-03-01 10:00 A | 2023-03-16 12:00 A | 4SS | 100% |  |  |
| 6 |  | Создание заставки | 4w | 2023-03-16 12:00 A | 2023-04-13 16:00 A | 5 | 100% |  |  |
| 7 |  | Программирование интерфейса | 1.5w | 2023-06-16 11:37 | 2023-06-27 16:37 | 3, 12 |  | 0d |  |
| 8 | 3 | **Построение базы объектов** | 85d | 2023-03-23 14:00 A | 2023-07-26 13:00 |  | 20% | 2.23d |  |
| 9 |  | Анализ и построение структуры базы объектов | 3.45w | 2023-03-23 14:00 A | 2023-04-17 18:00 A |  | 100% |  |  |
| 10 |  | Программирование средств обработки базы объектов | 1.5w | 2023-04-18 09:00 | 2023-04-27 13:00 | 9 |  | 2.23d |  |
| 11 |  | Наполнение базы объектов | 12w | 2023-04-27 14:00 | 2023-07-26 13:00 | 10 |  | 2.23d |  |
| 12 | 4 | **Создание ядра GIS** | 72.08d | 2023-03-01 10:00 A | 2023-06-16 11:37 |  | 43% | 0d |  |
| 13 |  | Анализ и проектирование ядра | 3w | 2023-03-01 10:00 A | 2023-03-23 13:00 A |  | 100% |  |  |
| 14 |  | Создание модели ядра | 2.72w | 2023-03-23 14:00 A | 2023-04-20 14:49 | 13 | 82% | 0d |  |
| 15 |  | Тестирование модели ядра | 0.25w | 2023-04-27 14:00 | 2023-04-28 16:00 | 14 |  | 0d |  |
| 16 |  | Создание рабочей версии ядра | 6.12w | 2023-04-28 16:00 | 2023-06-16 11:37 | 15 |  | 0d |  |
| 17 |  | Создание мультимедиа-наполнения | 6w | 2023-04-13 16:00 A | 2023-05-31 13:00 | 3 | 10% | 41.23d |  |
| 18 |  | Создание справочной системы | 2w | 2023-07-07 10:37 | 2023-07-21 12:37 | 7 |  | 5.28d |  |
| 19 | 7 | **Создание руководства пользователя** | 17.38d | 2023-06-13 16:37 | 2023-07-07 10:37 | 7FS-10d |  | 0d |  |
| 20 |  | Разработка дизайна руководства | 1w | 2023-06-13 16:37 | 2023-06-20 17:37 |  |  | 0d |  |
| 21 |  | Написание руководства пользователя | 3w | 2023-06-15 16:37 | 2023-07-07 10:37 | 20SS+2d |  | 0d |  |
| 22 | 8 | **Создание web-сайта и поддержки** | 23.55d | 2023-06-15 16:37 | 2023-07-19 12:00 |  |  | 0d |  |
| 23 |  | Разработка структуры сайта | 1d | 2023-06-15 16:37 | 2023-06-16 16:37 | 21SS |  | 0d |  |
| 24 |  | Разработка дизайна сайта | 1.43w | 2023-06-16 16:37 | 2023-06-28 09:37 | 23 |  | 0d |  |
| 25 |  | Наполнение сайта | 3w | 2023-06-28 10:00 | 2023-07-19 12:00 | 24 |  | 0d |  |
| 26 |  | Тестирование сайта | 2.47w | 2023-07-12 12:00 | 2023-07-28 15:49 | 22FS-1w |  | 0d |  |
| 27 |  | Сдача сайта в эксплуатацию | 0w | 2023-07-28 15:49 | 2023-07-28 15:49 | 26 |  | 0d |  |
| 28 | 11 | **Совещание** | 95d | 2023-03-01 09:00 A | 2023-07-19 10:00 |  | 30% | 7.6d |  |
| 29 |  | Совещание 1 | 1h | 2023-03-01 09:00 A | 2023-03-01 10:00 A |  | 100% |  | start no earlier than 2023-03-01 09:00 |
| 30 |  | Совещание 2 | 1h | 2023-03-15 09:00 A | 2023-03-15 10:00 A |  | 100% |  | start no earlier than 2023-03-15 09:00 |
| 31 |  | Совещание 3 | 1h | 2023-03-22 09:00 A | 2023-03-22 10:00 A |  | 100% |  | start no earlier than 2023-03-22 09:00 |
| 32 |  | Совещание 4 | 1h | 2023-03-29 09:00 A | 2023-03-29 10:00 A |  | 100% |  | start no earlier than 2023-03-29 09:00 |
| 33 |  | Совещание 5 | 1h | 2023-04-05 09:00 A | 2023-04-05 10:00 A |  | 100% |  | start no earlier than 2023-04-05 09:00 |
| 34 |  | Совещание 6 | 1h | 2023-04-12 09:00 A | 2023-04-12 10:00 A |  | 100% |  | start no earlier than 2023-04-12 09:00 |
| 35 |  | Совещание 7 | 1h | 2023-04-19 09:00 | 2023-04-19 10:00 |  |  | 68.6d | start no earlier than 2023-04-19 09:00 |
| 36 |  | Совещание 8 | 1h | 2023-04-26 09:00 | 2023-04-26 10:00 |  |  | 63.6d | start no earlier than 2023-04-26 09:00 |
| 37 |  | Совещание 9 | 1h | 2023-05-03 09:00 | 2023-05-03 10:00 |  |  | 59.6d | start no earlier than 2023-05-03 09:00 |
| 38 |  | Совещание 10 | 1h | 2023-05-10 09:00 | 2023-05-10 10:00 |  |  | 56.6d | start no earlier than 2023-05-10 09:00 |
| 39 |  | Совещание 11 | 1h | 2023-05-17 09:00 | 2023-05-17 10:00 |  |  | 51.6d | start no earlier than 2023-05-17 09:00 |
| 40 |  | Совещание 12 | 1h | 2023-05-24 09:00 | 2023-05-24 10:00 |  |  | 46.6d | start no earlier than 2023-05-24 09:00 |
| 41 |  | Совещание 13 | 1h | 2023-05-31 09:00 | 2023-05-31 10:00 |  |  | 41.6d | start no earlier than 2023-05-31 09:00 |
| 42 |  | Совещание 14 | 1h | 2023-06-07 09:00 | 2023-06-07 10:00 |  |  | 36.6d | start no earlier than 2023-06-07 09:00 |
| 43 |  | Совещание 15 | 1h | 2023-06-14 09:00 | 2023-06-14 10:00 |  |  | 32.6d | start no earlier than 2023-06-14 09:00 |
| 44 |  | Совещание 16 | 1h | 2023-06-21 09:00 | 2023-06-21 10:00 |  |  | 27.6d | start no earlier than 2023-06-21 09:00 |
| 45 |  | Совещание 17 | 1h | 2023-06-28 09:00 | 2023-06-28 10:00 |  |  | 22.6d | start no earlier than 2023-06-28 09:00 |
| 46 |  | Совещание 18 | 1h | 2023-07-05 09:00 | 2023-07-05 10:00 |  |  | 17.6d | start no earlier than 2023-07-05 09:00 |
| 47 |  | Совещание 19 | 1h | 2023-07-12 09:00 | 2023-07-12 10:00 |  |  | 12.6d | start no earlier than 2023-07-12 09:00 |
| 48 |  | Совещание 20 | 1h | 2023-07-19 09:00 | 2023-07-19 10:00 |  |  | 7.6d | start no earlier than 2023-07-19 09:00 |

## Version 2 (saved 2023-04-02, file lab05-task03-01.mpp)

Note of the change: Merge pull request #6 from MyMiDiII/lab05

Last finish 2023-07-28 → 2023-05-30 (-59d). Complete tasks 12 → 0.

Removed: 2 Создание интерфейса; 8 Построение базы объектов; 12 Создание ядра GIS; 22 Создание web-сайта и поддержки; 28 Совещание; 36 Совещание 8; 37 Совещание 9; 38 Совещание 10; 39 Совещание 11; 40 Совещание 12; 41 Совещание 13; 42 Совещание 14; 43 Совещание 15; 44 Совещание 16; 45 Совещание 17; 46 Совещание 18; 47 Совещание 19; 48 Совещание 20

Changed:

| ID | Task | Start | Finish | Duration | Complete | Total float | Predecessors | Other |
| --- | --- | --- | --- | --- | --- | --- | --- | --- |
| 1 | Начало проекта | 2023-03-01 09:00 A → 2023-03-01 | 2023-03-01 09:00 A → 2023-03-01 |  | 100% → 0% | none → 70d |  | baseline start 2023-03-01 09:00 → none; baseline finish 2023-03-01 09:00 → none |
| 2 | **Анализ и проектирование** | 2023-03-01 09:00 A → 2023-03-01 | 2023-03-01 10:00 A → 2023-03-23 (+22d) | 1h → 15d | 100% → 0% | none → 45d |  | was named Совещание 1; constraint start no earlier than 2023-03-01 09:00 → none; resources 3D аниматор; Web-дизайнер; Ведущий программист; Мультимедиа-корреспондент; Системный аналитик; Технический писатель; Художник-дизайнер → none; baseline start 2023-03-01 09:00 → none; baseline finish 2023-03-01 10:00 → none |
| 3 | Анализ и построение структуры базы объектов | 2023-03-23 14:00 A → 2023-03-01 (-22d) | 2023-04-17 18:00 A → 2023-03-16 (-32d) | 3.45w → 2w | 100% → 0% | none → 50d |  | baseline start 2023-03-23 14:00 → none; baseline finish 2023-04-06 16:00 → none |
| 4 | Анализ и проектирование ядра | 2023-03-01 10:00 A → 2023-03-01 | 2023-03-23 13:00 A → 2023-03-23 |  | 100% → 0% | none → 45d |  | baseline start 2023-03-01 10:00 → none; baseline finish 2023-03-23 13:00 → none |
| 5 | **Разработка** | 2023-03-15 09:00 A → 2023-03-01 (-14d) | 2023-03-15 10:00 A → 2023-05-16 (+62d) | 1h → 50d | 100% → 0% | none → 10d |  | was named Совещание 2; constraint start no earlier than 2023-03-15 09:00 → none; resources 3D аниматор; Web-дизайнер; Ведущий программист; Мультимедиа-корреспондент; Системный аналитик; Технический писатель; Художник-дизайнер → none; baseline start 2023-03-15 09:00 → none; baseline finish 2023-03-15 10:00 → none |
| 6 | **Дизайна** | 2023-03-22 09:00 A → 2023-03-01 (-21d) | 2023-03-22 10:00 A → 2023-03-23 (+1d) | 1h → 15d | 100% → 0% | none → 45d |  | was named Совещание 3; constraint start no earlier than 2023-03-22 09:00 → none; resources 3D аниматор; Web-дизайнер; Ведущий программист; Мультимедиа-корреспондент; Системный аналитик; Технический писатель; Художник-дизайнер → none; baseline start 2023-03-22 09:00 → none; baseline finish 2023-03-22 10:00 → none |
| 7 | **Разработка дизайна интерфейса** | 2023-03-01 10:00 A → 2023-03-01 | 2023-04-13 16:00 A → 2023-03-23 (-21d) | 30.5d → 15d | 100% → 0% | none → 45d |  | baseline start 2023-03-01 10:00 → none; baseline finish 2023-04-06 16:00 → none |
| 8 | Разработка 2D графических элементов | 2023-03-01 10:00 A → 2023-03-01 | 2023-03-23 13:00 A → 2023-03-23 |  | 100% → 0% | none → 45d |  | baseline start 2023-03-01 10:00 → none; baseline finish 2023-03-23 13:00 → none |
| 9 | Разработка 3D графических элементов | 2023-03-01 10:00 A → 2023-03-01 | 2023-03-16 12:00 A → 2023-03-16 |  | 100% → 0% | none → 50d | 8SS → none | baseline start 2023-03-01 10:00 → none; baseline finish 2023-03-16 12:00 → none |
| 10 | Создание заставки | 2023-03-16 12:00 A → 2023-03-01 (-15d) | 2023-04-13 16:00 A → 2023-03-23 (-21d) | 4w → 3w | 100% → 0% | none → 45d | 9 → none | baseline start 2023-03-16 12:00 → none; baseline finish 2023-04-06 16:00 → none |
| 11 | Разработка структуры сайта | 2023-06-15 16:37 → 2023-03-01 (-106d) | 2023-06-16 16:37 → 2023-03-01 (-107d) |  |  | 0d → 59d | 25SS → none | baseline start 2023-06-05 11:26 → none; baseline finish 2023-06-06 11:26 → none |
| 12 | Разработка дизайна сайта | 2023-06-16 16:37 → 2023-03-01 (-107d) | 2023-06-28 09:37 → 2023-03-09 (-111d) | 1.43w → 1w |  | 0d → 55d | 11 → none | baseline start 2023-06-06 11:26 → none; baseline finish 2023-06-16 14:26 → none |
| 13 | **Программного обеспечения** | 2023-03-29 09:00 A → 2023-03-01 (-28d) | 2023-03-29 10:00 A → 2023-05-16 (+48d) | 1h → 50d | 100% → 0% | none → 10d |  | was named Совещание 4; constraint start no earlier than 2023-03-29 09:00 → none; resources 3D аниматор; Web-дизайнер; Ведущий программист; Мультимедиа-корреспондент; Системный аналитик; Технический писатель; Художник-дизайнер → none; baseline start 2023-03-29 09:00 → none; baseline finish 2023-03-29 10:00 → none |
| 14 | Программирование интерфейса | 2023-06-16 11:37 → 2023-03-01 (-107d) | 2023-06-27 16:37 → 2023-03-23 (-96d) | 1.5w → 3w |  | 0d → 45d | 7, Создание ядра GIS → none | resources Программист #3; Программист #4; Программист #1; Программист #2 → Программист #3; Программист #4; baseline start 2023-06-05 16:26 → none; baseline finish 2023-06-16 11:26 → none |
| 15 | Программирование средств обработки базы объектов | 2023-04-18 09:00 → 2023-03-01 (-48d) | 2023-04-27 13:00 → 2023-03-23 (-35d) | 1.5w → 3w |  | 2.23d → 45d | 3 → none | resources Программист #3; Программист #4; Программист #1; Программист #2 → Программист #3; Программист #4; baseline start 2023-04-06 16:00 → none; baseline finish 2023-04-18 11:00 → none |
| 16 | Создание модели ядра | 2023-03-23 14:00 A → 2023-03-01 (-22d) | 2023-04-20 14:49 → 2023-04-06 (-14d) | 2.72w → 5w | 82% → 0% | 0d → 35d | 4 → none | resources Программист #1; Ведущий программист; Программист #2; Программист #3; Программист #4 → Программист #1; Ведущий программист; baseline start 2023-03-23 14:00 → none; baseline finish 2023-04-06 14:49 → none |
| 17 | Создание рабочей версии ядра | 2023-04-28 16:00 → 2023-03-01 (-58d) | 2023-06-16 11:37 → 2023-05-16 (-31d) | 6.12w → 10w |  | 0d → 10d | 19 → none | resources Программист #1; Ведущий программист; Программист #2; Программист #3; Программист #4 → Программист #1; Ведущий программист; Программист #2; baseline start 2023-04-19 11:49 → none; baseline finish 2023-06-05 16:26 → none |
| 18 | **Тестирование** | 2023-04-05 09:00 A → 2023-03-01 (-35d) | 2023-04-05 10:00 A → 2023-03-30 (-6d) | 1h → 20d | 100% → 0% | none → 40d |  | was named Совещание 5; constraint start no earlier than 2023-04-05 09:00 → none; resources 3D аниматор; Web-дизайнер; Мультимедиа-корреспондент; Системный аналитик; Технический писатель; Художник-дизайнер → none; baseline start 2023-04-05 09:00 → none; baseline finish 2023-04-05 10:00 → none |
| 19 | Тестирование модели ядра | 2023-04-27 14:00 → 2023-03-01 (-57d) | 2023-04-28 16:00 → 2023-03-09 (-50d) | 0.25w → 1w |  | 0d → 55d | 16 → none | resources Программист #1; Программист #2; Программист #3; Программист #4 → Программист #1; baseline start 2023-04-06 14:49 → none; baseline finish 2023-04-19 11:49 → none |
| 20 | Тестирование сайта | 2023-07-12 12:00 → 2023-03-01 (-133d) | 2023-07-28 15:49 → 2023-03-30 (-120d) | 2.47w → 4w |  | 0d → 40d | Создание web-сайта и поддержкиFS-1w → none | resources Программист #1; Ведущий программист; Программист #2; Программист #3; Программист #4 → Программист #1; Ведущий программист; Программист #2; baseline start 2023-06-30 17:26 → none; baseline finish 2023-07-19 11:15 → none |
| 21 | **Документация** | 2023-04-12 09:00 A → 2023-03-01 (-42d) | 2023-04-12 10:00 A → 2023-03-23 (-20d) | 1h → 15d | 100% → 0% | none → 45d |  | was named Совещание 6; constraint start no earlier than 2023-04-12 09:00 → none; resources 3D аниматор; Мультимедиа-корреспондент; Системный аналитик → none; baseline start 2023-04-12 09:00 → none; baseline finish 2023-04-12 10:00 → none |
| 22 | Создание справочной системы | 2023-07-07 10:37 → 2023-03-01 (-128d) | 2023-07-21 12:37 → 2023-03-16 (-127d) |  |  | 5.28d → 50d | 14 → none | baseline start 2023-06-27 15:26 → none; baseline finish 2023-07-11 17:26 → none |
| 23 | **Создание руководства пользователя** | 2023-06-13 16:37 → 2023-03-01 (-104d) | 2023-07-07 10:37 → 2023-03-23 (-106d) | 17.38d → 15d |  | 0d → 45d | 14FS-10d → none | baseline start 2023-06-01 11:26 → none; baseline finish 2023-06-27 15:26 → none |
| 24 | Разработка дизайна руководства | 2023-06-13 16:37 → 2023-03-01 (-104d) | 2023-06-20 17:37 → 2023-03-09 (-103d) |  |  | 0d → 55d |  | baseline start 2023-06-01 11:26 → none; baseline finish 2023-06-08 12:26 → none |
| 25 | Написание руководства пользователя | 2023-06-15 16:37 → 2023-03-01 (-106d) | 2023-07-07 10:37 → 2023-03-23 (-106d) |  |  | 0d → 45d | 24SS+2d → none | baseline start 2023-06-05 11:26 → none; baseline finish 2023-06-27 15:26 → none |
| 26 | **Поддержка** | 2023-04-19 09:00 → 2023-03-01 (-49d) | 2023-04-19 10:00 → 2023-05-30 (+41d) | 1h → 60d |  | 68.6d → 0d |  | was named Совещание 7; constraint start no earlier than 2023-04-19 09:00 → none; resources Ведущий программист; Мультимедиа-корреспондент → none; baseline start 2023-04-19 09:00 → none; baseline finish 2023-04-19 10:00 → none |
| 27 | Наполнение базы объектов | 2023-04-27 14:00 → 2023-03-01 (-57d) | 2023-07-26 13:00 → 2023-05-30 (-57d) |  |  | 2.23d → 0d | 15 → none | baseline start 2023-04-18 11:00 → none; baseline finish 2023-07-17 11:00 → none |
| 28 | Создание мультимедиа-наполнения | 2023-04-13 16:00 A → 2023-03-01 (-43d) | 2023-05-31 13:00 → 2023-03-23 (-69d) | 6w → 3w | 10% → 0% | 41.23d → 45d | 7 → none | baseline start 2023-04-06 16:00 → none; baseline finish 2023-05-24 15:00 → none |
| 29 | Наполнение сайта | 2023-06-28 10:00 → 2023-03-01 (-119d) | 2023-07-19 12:00 → 2023-03-23 (-118d) |  |  | 0d → 45d | 12 → none | baseline start 2023-06-16 14:26 → none; baseline finish 2023-07-07 17:26 → none |
| 30 | Сдача сайта в эксплуатацию | 2023-07-28 15:49 → 2023-03-01 (-149d) | 2023-07-28 15:49 → 2023-03-01 (-149d) |  |  | 0d → 60d | 20 → none | baseline start 2023-07-19 11:15 → none; baseline finish 2023-07-19 11:15 → none |

## Version 3 (data date 2023-04-17, saved 2023-04-02, file lab05-task02.mpp)

Note of the change: ADD: практика лр5

Last finish 2023-05-30 → 2023-07-28 (+59d). Complete tasks 0 → 12.

Added:

| ID | Task | Duration | Start | Finish | Predecessors | Constraint | Resources |
| --- | --- | --- | --- | --- | --- | --- | --- |
| 2 | **Создание интерфейса** | 79.58d | 2023-03-01 10:00 A | 2023-06-27 16:37 | 1 |  |  |
| 8 | **Построение базы объектов** | 85d | 2023-03-23 14:00 A | 2023-07-26 13:00 |  |  | Сервер |
| 12 | **Создание ядра GIS** | 72.08d | 2023-03-01 10:00 A | 2023-06-16 11:37 |  |  |  |
| 22 | **Создание web-сайта и поддержки** | 23.55d | 2023-06-15 16:37 | 2023-07-19 12:00 |  |  |  |
| 28 | **Совещание** | 95d | 2023-03-01 09:00 A | 2023-07-19 10:00 |  |  |  |
| 36 | Совещание 8 | 1h | 2023-04-26 09:00 | 2023-04-26 10:00 |  | start no earlier than 2023-04-26 09:00 | Ведущий программист; Мультимедиа-корреспондент |
| 37 | Совещание 9 | 1h | 2023-05-03 09:00 | 2023-05-03 10:00 |  | start no earlier than 2023-05-03 09:00 | Ведущий программист; Мультимедиа-корреспондент |
| 38 | Совещание 10 | 1h | 2023-05-10 09:00 | 2023-05-10 10:00 |  | start no earlier than 2023-05-10 09:00 | Ведущий программист; Мультимедиа-корреспондент |
| 39 | Совещание 11 | 1h | 2023-05-17 09:00 | 2023-05-17 10:00 |  | start no earlier than 2023-05-17 09:00 | Ведущий программист; Мультимедиа-корреспондент |
| 40 | Совещание 12 | 1h | 2023-05-24 09:00 | 2023-05-24 10:00 |  | start no earlier than 2023-05-24 09:00 | Ведущий программист; Мультимедиа-корреспондент |
| 41 | Совещание 13 | 1h | 2023-05-31 09:00 | 2023-05-31 10:00 |  | start no earlier than 2023-05-31 09:00 | Ведущий программист; Мультимедиа-корреспондент; Художник-дизайнер |
| 42 | Совещание 14 | 1h | 2023-06-07 09:00 | 2023-06-07 10:00 |  | start no earlier than 2023-06-07 09:00 | 3D аниматор; Web-дизайнер; Ведущий программист; Технический писатель; Художник-дизайнер |
| 43 | Совещание 15 | 1h | 2023-06-14 09:00 | 2023-06-14 10:00 |  | start no earlier than 2023-06-14 09:00 | 3D аниматор; Web-дизайнер; Ведущий программист; Технический писатель; Художник-дизайнер |
| 44 | Совещание 16 | 1h | 2023-06-21 09:00 | 2023-06-21 10:00 |  | start no earlier than 2023-06-21 09:00 | 3D аниматор; Web-дизайнер; Технический писатель; Художник-дизайнер |
| 45 | Совещание 17 | 1h | 2023-06-28 09:00 | 2023-06-28 10:00 |  | start no earlier than 2023-06-28 09:00 | Web-дизайнер; Технический писатель; Художник-дизайнер |
| 46 | Совещание 18 | 1h | 2023-07-05 09:00 | 2023-07-05 10:00 |  | start no earlier than 2023-07-05 09:00 | Web-дизайнер; Ведущий программист; Технический писатель |
| 47 | Совещание 19 | 1h | 2023-07-12 09:00 | 2023-07-12 10:00 |  | start no earlier than 2023-07-12 09:00 | Web-дизайнер; Ведущий программист; Технический писатель |
| 48 | Совещание 20 | 1h | 2023-07-19 09:00 | 2023-07-19 10:00 |  | start no earlier than 2023-07-19 09:00 | Web-дизайнер; Ведущий программист; Технический писатель |

Changed:

| ID | Task | Start | Finish | Duration | Complete | Total float | Predecessors | Other |
| --- | --- | --- | --- | --- | --- | --- | --- | --- |
| 1 | Начало проекта | 2023-03-01 → 2023-03-01 09:00 A | 2023-03-01 → 2023-03-01 09:00 A |  | 0% → 100% | 70d → none |  | baseline start none → 2023-03-01 09:00; baseline finish none → 2023-03-01 09:00 |
| 3 | **Разработка дизайна интерфейса** | 2023-03-01 → 2023-03-01 10:00 A | 2023-03-23 → 2023-04-13 16:00 A (+21d) | 15d → 30.5d | 0% → 100% | 45d → none |  | baseline start none → 2023-03-01 10:00; baseline finish none → 2023-04-06 16:00 |
| 4 | Разработка 2D графических элементов | 2023-03-01 → 2023-03-01 10:00 A | 2023-03-23 → 2023-03-23 13:00 A |  | 0% → 100% | 45d → none |  | baseline start none → 2023-03-01 10:00; baseline finish none → 2023-03-23 13:00 |
| 5 | Разработка 3D графических элементов | 2023-03-01 → 2023-03-01 10:00 A | 2023-03-16 → 2023-03-16 12:00 A |  | 0% → 100% | 50d → none | none → 4SS | baseline start none → 2023-03-01 10:00; baseline finish none → 2023-03-16 12:00 |
| 6 | Создание заставки | 2023-03-01 → 2023-03-16 12:00 A (+15d) | 2023-03-23 → 2023-04-13 16:00 A (+21d) | 3w → 4w | 0% → 100% | 45d → none | none → 5 | baseline start none → 2023-03-16 12:00; baseline finish none → 2023-04-06 16:00 |
| 7 | Программирование интерфейса | 2023-03-01 → 2023-06-16 11:37 (+107d) | 2023-03-23 → 2023-06-27 16:37 (+96d) | 3w → 1.5w |  | 45d → 0d | none → 3, 12 | resources Программист #3; Программист #4 → Программист #3; Программист #4; Программист #1; Программист #2; baseline start none → 2023-06-05 16:26; baseline finish none → 2023-06-16 11:26 |
| 9 | Анализ и построение структуры базы объектов | 2023-03-01 → 2023-03-23 14:00 A (+22d) | 2023-03-16 → 2023-04-17 18:00 A (+32d) | 2w → 3.45w | 0% → 100% | 50d → none |  | baseline start none → 2023-03-23 14:00; baseline finish none → 2023-04-06 16:00 |
| 10 | Программирование средств обработки базы объектов | 2023-03-01 → 2023-04-18 09:00 (+48d) | 2023-03-23 → 2023-04-27 13:00 (+35d) | 3w → 1.5w |  | 45d → 2.23d | none → 9 | resources Программист #3; Программист #4 → Программист #3; Программист #4; Программист #1; Программист #2; baseline start none → 2023-04-06 16:00; baseline finish none → 2023-04-18 11:00 |
| 11 | Наполнение базы объектов | 2023-03-01 → 2023-04-27 14:00 (+57d) | 2023-05-30 → 2023-07-26 13:00 (+57d) |  |  | 0d → 2.23d | none → 10 | baseline start none → 2023-04-18 11:00; baseline finish none → 2023-07-17 11:00 |
| 13 | Анализ и проектирование ядра | 2023-03-01 → 2023-03-01 10:00 A | 2023-03-23 → 2023-03-23 13:00 A |  | 0% → 100% | 45d → none |  | baseline start none → 2023-03-01 10:00; baseline finish none → 2023-03-23 13:00 |
| 14 | Создание модели ядра | 2023-03-01 → 2023-03-23 14:00 A (+22d) | 2023-04-06 → 2023-04-20 14:49 (+14d) | 5w → 2.72w | 0% → 82% | 35d → 0d | none → 13 | resources Программист #1; Ведущий программист → Программист #1; Ведущий программист; Программист #2; Программист #3; Программист #4; baseline start none → 2023-03-23 14:00; baseline finish none → 2023-04-06 14:49 |
| 15 | Тестирование модели ядра | 2023-03-01 → 2023-04-27 14:00 (+57d) | 2023-03-09 → 2023-04-28 16:00 (+50d) | 1w → 0.25w |  | 55d → 0d | none → 14 | resources Программист #1 → Программист #1; Программист #2; Программист #3; Программист #4; baseline start none → 2023-04-06 14:49; baseline finish none → 2023-04-19 11:49 |
| 16 | Создание рабочей версии ядра | 2023-03-01 → 2023-04-28 16:00 (+58d) | 2023-05-16 → 2023-06-16 11:37 (+31d) | 10w → 6.12w |  | 10d → 0d | none → 15 | resources Программист #1; Ведущий программист; Программист #2 → Программист #1; Ведущий программист; Программист #2; Программист #3; Программист #4; baseline start none → 2023-04-19 11:49; baseline finish none → 2023-06-05 16:26 |
| 17 | Создание мультимедиа-наполнения | 2023-03-01 → 2023-04-13 16:00 A (+43d) | 2023-03-23 → 2023-05-31 13:00 (+69d) | 3w → 6w | 0% → 10% | 45d → 41.23d | none → 3 | baseline start none → 2023-04-06 16:00; baseline finish none → 2023-05-24 15:00 |
| 18 | Создание справочной системы | 2023-03-01 → 2023-07-07 10:37 (+128d) | 2023-03-16 → 2023-07-21 12:37 (+127d) |  |  | 50d → 5.28d | none → 7 | baseline start none → 2023-06-27 15:26; baseline finish none → 2023-07-11 17:26 |
| 19 | **Создание руководства пользователя** | 2023-03-01 → 2023-06-13 16:37 (+104d) | 2023-03-23 → 2023-07-07 10:37 (+106d) | 15d → 17.38d |  | 45d → 0d | none → 7FS-10d | baseline start none → 2023-06-01 11:26; baseline finish none → 2023-06-27 15:26 |
| 20 | Разработка дизайна руководства | 2023-03-01 → 2023-06-13 16:37 (+104d) | 2023-03-09 → 2023-06-20 17:37 (+103d) |  |  | 55d → 0d |  | baseline start none → 2023-06-01 11:26; baseline finish none → 2023-06-08 12:26 |
| 21 | Написание руководства пользователя | 2023-03-01 → 2023-06-15 16:37 (+106d) | 2023-03-23 → 2023-07-07 10:37 (+106d) |  |  | 45d → 0d | none → 20SS+2d | baseline start none → 2023-06-05 11:26; baseline finish none → 2023-06-27 15:26 |
| 23 | Разработка структуры сайта | 2023-03-01 → 2023-06-15 16:37 (+106d) | 2023-03-01 → 2023-06-16 16:37 (+107d) |  |  | 59d → 0d | none → 21SS | baseline start none → 2023-06-05 11:26; baseline finish none → 2023-06-06 11:26 |
| 24 | Разработка дизайна сайта | 2023-03-01 → 2023-06-16 16:37 (+107d) | 2023-03-09 → 2023-06-28 09:37 (+111d) | 1w → 1.43w |  | 55d → 0d | none → 23 | baseline start none → 2023-06-06 11:26; baseline finish none → 2023-06-16 14:26 |
| 25 | Наполнение сайта | 2023-03-01 → 2023-06-28 10:00 (+119d) | 2023-03-23 → 2023-07-19 12:00 (+118d) |  |  | 45d → 0d | none → 24 | baseline start none → 2023-06-16 14:26; baseline finish none → 2023-07-07 17:26 |
| 26 | Тестирование сайта | 2023-03-01 → 2023-07-12 12:00 (+133d) | 2023-03-30 → 2023-07-28 15:49 (+120d) | 4w → 2.47w |  | 40d → 0d | none → 22FS-1w | resources Программист #1; Ведущий программист; Программист #2 → Программист #1; Ведущий программист; Программист #2; Программист #3; Программист #4; baseline start none → 2023-06-30 17:26; baseline finish none → 2023-07-19 11:15 |
| 27 | Сдача сайта в эксплуатацию | 2023-03-01 → 2023-07-28 15:49 (+149d) | 2023-03-01 → 2023-07-28 15:49 (+149d) |  |  | 60d → 0d | none → 26 | baseline start none → 2023-07-19 11:15; baseline finish none → 2023-07-19 11:15 |
| 29 | Совещание 1 | 2023-03-01 → 2023-03-01 09:00 A | 2023-03-23 → 2023-03-01 10:00 A (-22d) | 15d → 1h | 0% → 100% | 45d → none |  | was named Анализ и проектирование; constraint none → start no earlier than 2023-03-01 09:00; resources none → 3D аниматор; Web-дизайнер; Ведущий программист; Мультимедиа-корреспондент; Системный аналитик; Технический писатель; Художник-дизайнер; baseline start none → 2023-03-01 09:00; baseline finish none → 2023-03-01 10:00 |
| 30 | Совещание 2 | 2023-03-01 → 2023-03-15 09:00 A (+14d) | 2023-05-16 → 2023-03-15 10:00 A (-62d) | 50d → 1h | 0% → 100% | 10d → none |  | was named Разработка; constraint none → start no earlier than 2023-03-15 09:00; resources none → 3D аниматор; Web-дизайнер; Ведущий программист; Мультимедиа-корреспондент; Системный аналитик; Технический писатель; Художник-дизайнер; baseline start none → 2023-03-15 09:00; baseline finish none → 2023-03-15 10:00 |
| 31 | Совещание 3 | 2023-03-01 → 2023-03-22 09:00 A (+21d) | 2023-03-23 → 2023-03-22 10:00 A (-1d) | 15d → 1h | 0% → 100% | 45d → none |  | was named Дизайна; constraint none → start no earlier than 2023-03-22 09:00; resources none → 3D аниматор; Web-дизайнер; Ведущий программист; Мультимедиа-корреспондент; Системный аналитик; Технический писатель; Художник-дизайнер; baseline start none → 2023-03-22 09:00; baseline finish none → 2023-03-22 10:00 |
| 32 | Совещание 4 | 2023-03-01 → 2023-03-29 09:00 A (+28d) | 2023-05-16 → 2023-03-29 10:00 A (-48d) | 50d → 1h | 0% → 100% | 10d → none |  | was named Программного обеспечения; constraint none → start no earlier than 2023-03-29 09:00; resources none → 3D аниматор; Web-дизайнер; Ведущий программист; Мультимедиа-корреспондент; Системный аналитик; Технический писатель; Художник-дизайнер; baseline start none → 2023-03-29 09:00; baseline finish none → 2023-03-29 10:00 |
| 33 | Совещание 5 | 2023-03-01 → 2023-04-05 09:00 A (+35d) | 2023-03-30 → 2023-04-05 10:00 A (+6d) | 20d → 1h | 0% → 100% | 40d → none |  | was named Тестирование; constraint none → start no earlier than 2023-04-05 09:00; resources none → 3D аниматор; Web-дизайнер; Мультимедиа-корреспондент; Системный аналитик; Технический писатель; Художник-дизайнер; baseline start none → 2023-04-05 09:00; baseline finish none → 2023-04-05 10:00 |
| 34 | Совещание 6 | 2023-03-01 → 2023-04-12 09:00 A (+42d) | 2023-03-23 → 2023-04-12 10:00 A (+20d) | 15d → 1h | 0% → 100% | 45d → none |  | was named Документация; constraint none → start no earlier than 2023-04-12 09:00; resources none → 3D аниматор; Мультимедиа-корреспондент; Системный аналитик; baseline start none → 2023-04-12 09:00; baseline finish none → 2023-04-12 10:00 |
| 35 | Совещание 7 | 2023-03-01 → 2023-04-19 09:00 (+49d) | 2023-05-30 → 2023-04-19 10:00 (-41d) | 60d → 1h |  | 0d → 68.6d |  | was named Поддержка; constraint none → start no earlier than 2023-04-19 09:00; resources none → Ведущий программист; Мультимедиа-корреспондент; baseline start none → 2023-04-19 09:00; baseline finish none → 2023-04-19 10:00 |

## Version 4 (saved 2023-04-03, file lab05-task03-02.mpp)

Note of the change: ADD: практика лр5

Last finish 2023-07-28 → 2023-08-16 (+19d). Complete tasks 12 → 0.

Removed: 2 Создание интерфейса; 8 Построение базы объектов; 12 Создание ядра GIS; 22 Создание web-сайта и поддержки; 28 Совещание; 36 Совещание 8; 37 Совещание 9; 38 Совещание 10; 39 Совещание 11; 40 Совещание 12; 41 Совещание 13; 42 Совещание 14; 43 Совещание 15; 44 Совещание 16; 45 Совещание 17; 46 Совещание 18; 47 Совещание 19; 48 Совещание 20

Changed:

| ID | Task | Start | Finish | Duration | Complete | Total float | Predecessors | Other |
| --- | --- | --- | --- | --- | --- | --- | --- | --- |
| 1 | Начало проекта | 2023-03-01 09:00 A → 2023-03-01 | 2023-03-01 09:00 A → 2023-03-01 |  | 100% → 0% | none → 0d |  | baseline start 2023-03-01 09:00 → none; baseline finish 2023-03-01 09:00 → none |
| 2 | **Анализ и проектирование** | 2023-03-01 09:00 A → 2023-03-01 | 2023-03-01 10:00 A → 2023-03-23 (+22d) | 1h → 15d | 100% → 0% | none → 0d |  | was named Совещание 1; constraint start no earlier than 2023-03-01 09:00 → none; resources 3D аниматор; Web-дизайнер; Ведущий программист; Мультимедиа-корреспондент; Системный аналитик; Технический писатель; Художник-дизайнер → none; baseline start 2023-03-01 09:00 → none; baseline finish 2023-03-01 10:00 → none |
| 3 | Анализ и построение структуры базы объектов | 2023-03-23 14:00 A → 2023-03-01 (-22d) | 2023-04-17 18:00 A → 2023-03-16 (-32d) | 3.45w → 2w | 100% → 0% | none → 10d | none → 1 | baseline start 2023-03-23 14:00 → none; baseline finish 2023-04-06 16:00 → none |
| 4 | Анализ и проектирование ядра | 2023-03-01 10:00 A → 2023-03-01 | 2023-03-23 13:00 A → 2023-03-23 |  | 100% → 0% | none → 0d | none → 1 | baseline start 2023-03-01 10:00 → none; baseline finish 2023-03-23 13:00 → none |
| 5 | **Разработка** | 2023-03-15 09:00 A → 2023-03-01 (-14d) | 2023-03-15 10:00 A → 2023-07-19 (+126d) | 1h → 95d | 100% → 0% | none → 0d |  | was named Совещание 2; constraint start no earlier than 2023-03-15 09:00 → none; resources 3D аниматор; Web-дизайнер; Ведущий программист; Мультимедиа-корреспондент; Системный аналитик; Технический писатель; Художник-дизайнер → none; baseline start 2023-03-15 09:00 → none; baseline finish 2023-03-15 10:00 → none |
| 6 | **Дизайна** | 2023-03-22 09:00 A → 2023-03-01 (-21d) | 2023-03-22 10:00 A → 2023-04-06 (+15d) | 1h → 25d | 100% → 0% | none → 55d |  | was named Совещание 3; constraint start no earlier than 2023-03-22 09:00 → none; resources 3D аниматор; Web-дизайнер; Ведущий программист; Мультимедиа-корреспондент; Системный аналитик; Технический писатель; Художник-дизайнер → none; baseline start 2023-03-22 09:00 → none; baseline finish 2023-03-22 10:00 → none |
| 7 | **Разработка дизайна интерфейса** | 2023-03-01 10:00 A → 2023-03-01 | 2023-04-13 16:00 A → 2023-04-06 (-7d) | 30.5d → 25d | 100% → 0% | none → 55d |  | baseline start 2023-03-01 10:00 → none; baseline finish 2023-04-06 16:00 → none |
| 8 | Разработка 2D графических элементов | 2023-03-01 10:00 A → 2023-03-01 | 2023-03-23 13:00 A → 2023-03-23 |  | 100% → 0% | none → 55d | none → 1 | baseline start 2023-03-01 10:00 → none; baseline finish 2023-03-23 13:00 → none |
| 9 | Разработка 3D графических элементов | 2023-03-01 10:00 A → 2023-03-01 | 2023-03-16 12:00 A → 2023-03-16 |  | 100% → 0% | none → 55d |  | baseline start 2023-03-01 10:00 → none; baseline finish 2023-03-16 12:00 → none |
| 10 | Создание заставки | 2023-03-16 12:00 A → 2023-03-16 | 2023-04-13 16:00 A → 2023-04-06 (-7d) | 4w → 3w | 100% → 0% | none → 55d |  | baseline start 2023-03-16 12:00 → none; baseline finish 2023-04-06 16:00 → none |
| 11 | Разработка структуры сайта | 2023-06-15 16:37 → 2023-03-01 (-106d) | 2023-06-16 16:37 → 2023-03-01 (-107d) |  |  | 0d → 94d | 25SS → 1 | baseline start 2023-06-05 11:26 → none; baseline finish 2023-06-06 11:26 → none |
| 12 | Разработка дизайна сайта | 2023-06-16 16:37 → 2023-03-02 (-106d) | 2023-06-28 09:37 → 2023-03-10 (-110d) | 1.43w → 1w |  | 0d → 94d |  | baseline start 2023-06-06 11:26 → none; baseline finish 2023-06-16 14:26 → none |
| 13 | **Программного обеспечения** | 2023-03-29 09:00 A → 2023-03-16 (-13d) | 2023-03-29 10:00 A → 2023-07-19 (+112d) | 1h → 85d | 100% → 0% | none → 0d |  | was named Совещание 4; constraint start no earlier than 2023-03-29 09:00 → none; resources 3D аниматор; Web-дизайнер; Ведущий программист; Мультимедиа-корреспондент; Системный аналитик; Технический писатель; Художник-дизайнер → none; baseline start 2023-03-29 09:00 → none; baseline finish 2023-03-29 10:00 → none |
| 14 | Программирование интерфейса | 2023-06-16 11:37 → 2023-04-27 (-50d) | 2023-06-27 16:37 → 2023-05-23 (-35d) | 1.5w → 3w |  | 0d → 40d | 7, Создание ядра GIS → 7, 16 | resources Программист #3; Программист #4; Программист #1; Программист #2 → Программист #3; Программист #4; baseline start 2023-06-05 16:26 → none; baseline finish 2023-06-16 11:26 → none |
| 15 | Программирование средств обработки базы объектов | 2023-04-18 09:00 → 2023-03-16 (-33d) | 2023-04-27 13:00 → 2023-04-06 (-21d) | 1.5w → 3w |  | 2.23d → 10d |  | resources Программист #3; Программист #4; Программист #1; Программист #2 → Программист #3; Программист #4; Сервер; baseline start 2023-04-06 16:00 → none; baseline finish 2023-04-18 11:00 → none |
| 16 | Создание модели ядра | 2023-03-23 14:00 A → 2023-03-23 | 2023-04-20 14:49 → 2023-04-27 (+7d) | 2.72w → 5w | 82% → 0% |  |  | resources Программист #1; Ведущий программист; Программист #2; Программист #3; Программист #4 → Программист #1; Ведущий программист; baseline start 2023-03-23 14:00 → none; baseline finish 2023-04-06 14:49 → none |
| 17 | Создание рабочей версии ядра | 2023-04-28 16:00 → 2023-05-05 (+7d) | 2023-06-16 11:37 → 2023-07-19 (+33d) | 6.12w → 10w |  |  |  | resources Программист #1; Ведущий программист; Программист #2; Программист #3; Программист #4 → Программист #1; Ведущий программист; Программист #2; baseline start 2023-04-19 11:49 → none; baseline finish 2023-06-05 16:26 → none |
| 18 | **Тестирование** | 2023-04-05 09:00 A → 2023-04-27 (+22d) | 2023-04-05 10:00 A → 2023-08-16 (+133d) | 1h → 75d | 100% → 0% | none → 0d |  | was named Совещание 5; constraint start no earlier than 2023-04-05 09:00 → none; resources 3D аниматор; Web-дизайнер; Мультимедиа-корреспондент; Системный аналитик; Технический писатель; Художник-дизайнер → none; baseline start 2023-04-05 09:00 → none; baseline finish 2023-04-05 10:00 → none |
| 19 | Тестирование модели ядра | 2023-04-27 14:00 → 2023-04-27 | 2023-04-28 16:00 → 2023-05-05 (+7d) | 0.25w → 1w |  |  |  | resources Программист #1; Программист #2; Программист #3; Программист #4 → Программист #1; baseline start 2023-04-06 14:49 → none; baseline finish 2023-04-19 11:49 → none |
| 20 | Тестирование сайта | 2023-07-12 12:00 → 2023-07-19 (+7d) | 2023-07-28 15:49 → 2023-08-16 (+19d) | 2.47w → 4w |  |  | Создание web-сайта и поддержкиFS-1w → 14, 17, 29 | resources Программист #1; Ведущий программист; Программист #2; Программист #3; Программист #4 → Программист #1; Ведущий программист; Программист #2; baseline start 2023-06-30 17:26 → none; baseline finish 2023-07-19 11:15 → none |
| 21 | **Документация** | 2023-04-12 09:00 A → 2023-05-23 (+41d) | 2023-04-12 10:00 A → 2023-06-16 (+65d) | 1h → 17d | 100% → 0% | none → 43d |  | was named Совещание 6; constraint start no earlier than 2023-04-12 09:00 → none; resources 3D аниматор; Мультимедиа-корреспондент; Системный аналитик → none; baseline start 2023-04-12 09:00 → none; baseline finish 2023-04-12 10:00 → none |
| 22 | Создание справочной системы | 2023-07-07 10:37 → 2023-05-23 (-45d) | 2023-07-21 12:37 → 2023-06-06 (-45d) |  |  | 5.28d → 50d |  | baseline start 2023-06-27 15:26 → none; baseline finish 2023-07-11 17:26 → none |
| 23 | **Создание руководства пользователя** | 2023-06-13 16:37 → 2023-05-23 (-21d) | 2023-07-07 10:37 → 2023-06-16 (-21d) | 17.38d → 17d |  | 0d → 43d | 14FS-10d → 14 | baseline start 2023-06-01 11:26 → none; baseline finish 2023-06-27 15:26 → none |
| 24 | Разработка дизайна руководства | 2023-06-13 16:37 → 2023-05-23 (-21d) | 2023-06-20 17:37 → 2023-05-30 (-21d) |  |  | 0d → 43d |  | baseline start 2023-06-01 11:26 → none; baseline finish 2023-06-08 12:26 → none |
| 25 | Написание руководства пользователя | 2023-06-15 16:37 → 2023-05-25 (-21d) | 2023-07-07 10:37 → 2023-06-16 (-21d) |  |  | 0d → 43d |  | baseline start 2023-06-05 11:26 → none; baseline finish 2023-06-27 15:26 → none |
| 26 | **Поддержка** | 2023-04-19 09:00 → 2023-03-10 (-40d) | 2023-04-19 10:00 → 2023-07-05 (+77d) | 1h → 79d |  | 68.6d → 30d |  | was named Совещание 7; constraint start no earlier than 2023-04-19 09:00 → none; resources Ведущий программист; Мультимедиа-корреспондент → none; baseline start 2023-04-19 09:00 → none; baseline finish 2023-04-19 10:00 → none |
| 27 | Наполнение базы объектов | 2023-04-27 14:00 → 2023-04-06 (-21d) | 2023-07-26 13:00 → 2023-07-05 (-21d) |  |  | 2.23d → 10d |  | baseline start 2023-04-18 11:00 → none; baseline finish 2023-07-17 11:00 → none |
| 28 | Создание мультимедиа-наполнения | 2023-04-13 16:00 A → 2023-04-06 (-7d) | 2023-05-31 13:00 → 2023-04-27 (-34d) | 6w → 3w | 10% → 0% | 41.23d → 75d |  | baseline start 2023-04-06 16:00 → none; baseline finish 2023-05-24 15:00 → none |
| 29 | Наполнение сайта | 2023-06-28 10:00 → 2023-03-10 (-110d) | 2023-07-19 12:00 → 2023-03-31 (-110d) |  |  | 0d → 74d |  | baseline start 2023-06-16 14:26 → none; baseline finish 2023-07-07 17:26 → none |
| 30 | Сдача сайта в эксплуатацию | 2023-07-28 15:49 → 2023-08-16 (+19d) | 2023-07-28 15:49 → 2023-08-16 (+19d) |  |  |  |  | baseline start 2023-07-19 11:15 → none; baseline finish 2023-07-19 11:15 → none |

## Version 5 (saved 2023-04-03, file lab05-task03-03.mpp)

Note of the change: Merge pull request #6 from MyMiDiII/lab05

Last finish stays 2023-08-16.

Changed:

| ID | Task | Start | Finish | Duration | Total float |
| --- | --- | --- | --- | --- | --- |
| 2 | **Анализ и проектирование** |  | 2023-03-23 → 2023-04-06 (+14d) | 15d → 25d |  |
| 3 | Анализ и построение структуры базы объектов | 2023-03-01 → 2023-03-23 (+22d) | 2023-03-16 → 2023-04-06 (+21d) |  | 10d → 15d |
| 6 | **Дизайна** |  | 2023-04-06 → 2023-04-13 (+7d) | 25d → 30d | 55d → 45d |
| 7 | **Разработка дизайна интерфейса** |  | 2023-04-06 → 2023-04-13 (+7d) | 25d → 30d | 55d → 45d |
| 10 | Создание заставки | 2023-03-16 → 2023-03-23 (+7d) | 2023-04-06 → 2023-04-13 (+7d) |  | 55d → 45d |
| 12 | Разработка дизайна сайта |  | 2023-03-10 → 2023-03-30 (+20d) | 1w → 3w | 94d → 60d |
| 13 | **Программного обеспечения** | 2023-03-16 → 2023-03-23 (+7d) |  | 85d → 80d |  |
| 15 | Программирование средств обработки базы объектов | 2023-03-16 → 2023-04-06 (+21d) | 2023-04-06 → 2023-04-27 (+21d) |  | 10d → 15d |
| 21 | **Документация** |  | 2023-06-16 → 2023-06-28 (+12d) | 17d → 25d | 43d → 35d |
| 23 | **Создание руководства пользователя** |  | 2023-06-16 → 2023-06-28 (+12d) | 17d → 25d | 43d → 35d |
| 25 | Написание руководства пользователя | 2023-05-25 → 2023-06-06 (+12d) | 2023-06-16 → 2023-06-28 (+12d) |  | 43d → 35d |
| 26 | **Поддержка** | 2023-03-10 → 2023-03-30 (+20d) | 2023-07-05 → 2023-07-26 (+21d) | 79d → 80d | 30d → 15d |
| 27 | Наполнение базы объектов | 2023-04-06 → 2023-04-27 (+21d) | 2023-07-05 → 2023-07-26 (+21d) |  | 10d → 15d |
| 28 | Создание мультимедиа-наполнения | 2023-04-06 → 2023-04-13 (+7d) | 2023-04-27 → 2023-05-05 (+8d) |  | 75d → 70d |
| 29 | Наполнение сайта | 2023-03-10 → 2023-03-30 (+20d) | 2023-03-31 → 2023-04-20 (+20d) |  | 74d → 60d |

## Version 6 (saved 2023-04-03, file lab05-task03-04.mpp)

Note of the change: Merge pull request #6 from MyMiDiII/lab05

Last finish 2023-08-16 → 2023-08-18 (+2d).

Added:

| ID | Task | Duration | Start | Finish | Constraint | Resources |
| --- | --- | --- | --- | --- | --- | --- |
| 31 | **Совещание** | 115d | 2023-03-01 09:00 | 2023-08-16 10:00 |  |  |
| 32 | Совещание 1 | 1h | 2023-03-01 09:00 | 2023-03-01 10:00 | start no earlier than 2023-03-01 09:00 | 3D аниматор; Web-дизайнер; Ведущий программист; Мультимедиа-корреспондент; Системный аналитик; Технический писатель; Художник-дизайнер |
| 33 | Совещание 2 | 1h | 2023-03-15 09:00 | 2023-03-15 10:00 | start no earlier than 2023-03-15 09:00 | 3D аниматор; Web-дизайнер; Ведущий программист; Мультимедиа-корреспондент; Системный аналитик; Технический писатель; Художник-дизайнер |
| 34 | Совещание 3 | 1h | 2023-03-22 09:00 | 2023-03-22 10:00 | start no earlier than 2023-03-22 09:00 | 3D аниматор; Web-дизайнер; Ведущий программист; Мультимедиа-корреспондент; Системный аналитик; Технический писатель; Художник-дизайнер |
| 35 | Совещание 4 | 1h | 2023-03-29 09:00 | 2023-03-29 10:00 | start no earlier than 2023-03-29 09:00 | 3D аниматор; Web-дизайнер; Ведущий программист; Мультимедиа-корреспондент; Системный аналитик; Технический писатель; Художник-дизайнер |
| 36 | Совещание 5 | 1h | 2023-04-05 09:00 | 2023-04-05 10:00 | start no earlier than 2023-04-05 09:00 | 3D аниматор; Web-дизайнер; Ведущий программист; Мультимедиа-корреспондент; Системный аналитик; Технический писатель; Художник-дизайнер |
| 37 | Совещание 6 | 1h | 2023-04-12 09:00 | 2023-04-12 10:00 | start no earlier than 2023-04-12 09:00 | 3D аниматор; Web-дизайнер; Ведущий программист; Мультимедиа-корреспондент; Системный аналитик; Технический писатель; Художник-дизайнер |
| 38 | Совещание 7 | 1h | 2023-04-19 09:00 | 2023-04-19 10:00 | start no earlier than 2023-04-19 09:00 | 3D аниматор; Web-дизайнер; Ведущий программист; Мультимедиа-корреспондент; Системный аналитик; Технический писатель; Художник-дизайнер |
| 39 | Совещание 8 | 1h | 2023-04-26 09:00 | 2023-04-26 10:00 | start no earlier than 2023-04-26 09:00 | 3D аниматор; Web-дизайнер; Ведущий программист; Мультимедиа-корреспондент; Системный аналитик; Технический писатель; Художник-дизайнер |
| 40 | Совещание 9 | 1h | 2023-05-03 09:00 | 2023-05-03 10:00 | start no earlier than 2023-05-03 09:00 | 3D аниматор; Web-дизайнер; Ведущий программист; Мультимедиа-корреспондент; Системный аналитик; Технический писатель; Художник-дизайнер |
| 41 | Совещание 10 | 1h | 2023-05-10 09:00 | 2023-05-10 10:00 | start no earlier than 2023-05-10 09:00 | 3D аниматор; Web-дизайнер; Ведущий программист; Мультимедиа-корреспондент; Системный аналитик; Технический писатель; Художник-дизайнер |
| 42 | Совещание 11 | 1h | 2023-05-17 09:00 | 2023-05-17 10:00 | start no earlier than 2023-05-17 09:00 | 3D аниматор; Web-дизайнер; Ведущий программист; Мультимедиа-корреспондент; Системный аналитик; Технический писатель; Художник-дизайнер |
| 43 | Совещание 12 | 1h | 2023-05-24 09:00 | 2023-05-24 10:00 | start no earlier than 2023-05-24 09:00 | 3D аниматор; Web-дизайнер; Ведущий программист; Мультимедиа-корреспондент; Системный аналитик; Технический писатель; Художник-дизайнер |
| 44 | Совещание 13 | 1h | 2023-05-31 09:00 | 2023-05-31 10:00 | start no earlier than 2023-05-31 09:00 | 3D аниматор; Web-дизайнер; Ведущий программист; Мультимедиа-корреспондент; Системный аналитик; Технический писатель; Художник-дизайнер |
| 45 | Совещание 14 | 1h | 2023-06-07 09:00 | 2023-06-07 10:00 | start no earlier than 2023-06-07 09:00 | 3D аниматор; Web-дизайнер; Ведущий программист; Мультимедиа-корреспондент; Системный аналитик; Технический писатель; Художник-дизайнер |
| 46 | Совещание 15 | 1h | 2023-06-14 09:00 | 2023-06-14 10:00 | start no earlier than 2023-06-14 09:00 | 3D аниматор; Web-дизайнер; Ведущий программист; Мультимедиа-корреспондент; Системный аналитик; Технический писатель; Художник-дизайнер |
| 47 | Совещание 16 | 1h | 2023-06-21 09:00 | 2023-06-21 10:00 | start no earlier than 2023-06-21 09:00 | 3D аниматор; Web-дизайнер; Ведущий программист; Мультимедиа-корреспондент; Системный аналитик; Технический писатель; Художник-дизайнер |
| 48 | Совещание 17 | 1h | 2023-06-28 09:00 | 2023-06-28 10:00 | start no earlier than 2023-06-28 09:00 | 3D аниматор; Web-дизайнер; Ведущий программист; Мультимедиа-корреспондент; Системный аналитик; Технический писатель; Художник-дизайнер |
| 49 | Совещание 18 | 1h | 2023-07-05 09:00 | 2023-07-05 10:00 | start no earlier than 2023-07-05 09:00 | 3D аниматор; Web-дизайнер; Ведущий программист; Мультимедиа-корреспондент; Системный аналитик; Технический писатель; Художник-дизайнер |
| 50 | Совещание 19 | 1h | 2023-07-12 09:00 | 2023-07-12 10:00 | start no earlier than 2023-07-12 09:00 | 3D аниматор; Web-дизайнер; Ведущий программист; Мультимедиа-корреспондент; Системный аналитик; Технический писатель; Художник-дизайнер |
| 51 | Совещание 20 | 1h | 2023-07-19 09:00 | 2023-07-19 10:00 | start no earlier than 2023-07-19 09:00 | 3D аниматор; Web-дизайнер; Ведущий программист; Мультимедиа-корреспондент; Системный аналитик; Технический писатель; Художник-дизайнер |
| 52 | Совещание 21 | 1h | 2023-07-26 09:00 | 2023-07-26 10:00 | start no earlier than 2023-07-26 09:00 | 3D аниматор; Web-дизайнер; Ведущий программист; Мультимедиа-корреспондент; Системный аналитик; Технический писатель; Художник-дизайнер |
| 53 | Совещание 22 | 1h | 2023-08-02 09:00 | 2023-08-02 10:00 | start no earlier than 2023-08-02 09:00 | 3D аниматор; Web-дизайнер; Ведущий программист; Мультимедиа-корреспондент; Системный аналитик; Технический писатель; Художник-дизайнер |
| 54 | Совещание 23 | 1h | 2023-08-09 09:00 | 2023-08-09 10:00 | start no earlier than 2023-08-09 09:00 | 3D аниматор; Web-дизайнер; Ведущий программист; Мультимедиа-корреспондент; Системный аналитик; Технический писатель; Художник-дизайнер |
| 55 | Совещание 24 | 1h | 2023-08-16 09:00 | 2023-08-16 10:00 | start no earlier than 2023-08-16 09:00 | 3D аниматор; Web-дизайнер; Ведущий программист; Мультимедиа-корреспондент; Системный аналитик; Технический писатель; Художник-дизайнер |

Changed:

| ID | Task | Start | Finish | Duration | Total float |
| --- | --- | --- | --- | --- | --- |
| 1 | Начало проекта | 2023-03-01 → 2023-03-01 09:00 | 2023-03-01 → 2023-03-01 09:00 |  |  |
| 2 | **Анализ и проектирование** | 2023-03-01 → 2023-03-01 10:00 | 2023-04-06 → 2023-04-06 16:00 | 25d → 25.5d |  |
| 3 | Анализ и построение структуры базы объектов | 2023-03-23 → 2023-03-23 14:00 | 2023-04-06 → 2023-04-06 16:00 |  | 15d → 17.12d |
| 4 | Анализ и проектирование ядра | 2023-03-01 → 2023-03-01 10:00 | 2023-03-23 → 2023-03-23 13:00 |  |  |
| 5 | **Разработка** | 2023-03-01 → 2023-03-01 10:00 | 2023-07-19 → 2023-07-21 12:00 (+2d) | 95d → 97.12d |  |
| 6 | **Дизайна** | 2023-03-01 → 2023-03-01 10:00 | 2023-04-13 → 2023-04-13 17:00 | 30d → 30.62d | 45d → 45.12d |
| 7 | **Разработка дизайна интерфейса** | 2023-03-01 → 2023-03-01 10:00 | 2023-04-13 → 2023-04-13 17:00 | 30d → 30.62d | 45d → 45.12d |
| 8 | Разработка 2D графических элементов | 2023-03-01 → 2023-03-01 10:00 | 2023-03-23 → 2023-03-23 13:00 |  | 45d → 45.12d |
| 9 | Разработка 3D графических элементов | 2023-03-01 → 2023-03-01 10:00 | 2023-03-16 → 2023-03-16 12:00 |  | 45d → 45.12d |
| 10 | Создание заставки | 2023-03-23 → 2023-03-23 14:00 | 2023-04-13 → 2023-04-13 17:00 |  | 45d → 45.12d |
| 11 | Разработка структуры сайта | 2023-03-01 → 2023-03-01 10:00 | 2023-03-01 → 2023-03-02 10:00 (+1d) |  | 60d → 61.38d |
| 12 | Разработка дизайна сайта | 2023-03-02 → 2023-03-02 10:00 | 2023-03-30 → 2023-03-30 15:00 |  | 60d → 61.38d |
| 13 | **Программного обеспечения** | 2023-03-23 → 2023-03-23 14:00 | 2023-07-19 → 2023-07-21 12:00 (+2d) | 80d → 81.88d |  |
| 14 | Программирование интерфейса | 2023-04-27 → 2023-04-28 10:00 (+1d) | 2023-05-23 → 2023-05-24 10:00 (+1d) |  | 35d → 34.88d |
| 15 | Программирование средств обработки базы объектов | 2023-04-06 → 2023-04-06 16:00 | 2023-04-27 → 2023-04-27 16:00 |  | 15d → 17.12d |
| 16 | Создание модели ядра | 2023-03-23 → 2023-03-23 14:00 | 2023-04-27 → 2023-04-28 10:00 (+1d) | 5w → 5.12w |  |
| 17 | Создание рабочей версии ядра | 2023-05-05 → 2023-05-10 10:00 (+5d) | 2023-07-19 → 2023-07-21 12:00 (+2d) | 10w → 10.25w |  |
| 18 | **Тестирование** | 2023-04-27 → 2023-04-28 10:00 (+1d) | 2023-08-16 → 2023-08-18 17:00 (+2d) | 75d → 76.75d |  |
| 19 | Тестирование модели ядра | 2023-04-27 → 2023-04-28 10:00 (+1d) | 2023-05-05 → 2023-05-10 10:00 (+5d) |  |  |
| 20 | Тестирование сайта | 2023-07-19 → 2023-07-21 12:00 (+2d) | 2023-08-16 → 2023-08-18 17:00 (+2d) | 4w → 4.1w |  |
| 21 | **Документация** | 2023-05-23 → 2023-05-24 10:00 (+1d) | 2023-06-28 → 2023-06-29 16:00 (+1d) | 25d → 25.62d | 35d → 34.88d |
| 22 | Создание справочной системы | 2023-05-23 → 2023-05-24 10:00 (+1d) | 2023-06-06 → 2023-06-07 12:00 (+1d) |  | 50d → 51.5d |
| 23 | **Создание руководства пользователя** | 2023-05-23 → 2023-05-24 10:00 (+1d) | 2023-06-28 → 2023-06-29 16:00 (+1d) | 25d → 25.62d | 35d → 34.88d |
| 24 | Разработка дизайна руководства | 2023-05-23 → 2023-05-24 10:00 (+1d) | 2023-05-30 → 2023-05-31 11:00 (+1d) |  | 35d → 34.88d |
| 25 | Написание руководства пользователя | 2023-06-06 → 2023-06-07 12:00 (+1d) | 2023-06-28 → 2023-06-29 16:00 (+1d) |  | 35d → 36.12d |
| 26 | **Поддержка** | 2023-03-30 → 2023-03-30 15:00 | 2023-07-26 → 2023-07-26 16:00 | 80d → 80.12d | 15d → 17.12d |
| 27 | Наполнение базы объектов | 2023-04-27 → 2023-04-27 16:00 | 2023-07-26 → 2023-07-26 16:00 |  | 15d → 17.12d |
| 28 | Создание мультимедиа-наполнения | 2023-04-13 → 2023-04-13 17:00 | 2023-05-05 → 2023-05-10 12:00 (+5d) |  | 70d → 71.5d |
| 29 | Наполнение сайта | 2023-03-30 → 2023-03-30 15:00 | 2023-04-20 → 2023-04-20 18:00 |  | 60d → 61.38d |
| 30 | Сдача сайта в эксплуатацию | 2023-08-16 → 2023-08-18 17:00 (+2d) | 2023-08-16 → 2023-08-18 17:00 (+2d) |  |  |

## Version 7 (saved 2023-04-03, file lab05-task03-05.mpp)

Note of the change: ADD: практика лр5

Last finish 2023-08-18 → 2023-07-07 (-42d).

Removed: 50 Совещание 19; 51 Совещание 20; 52 Совещание 21; 53 Совещание 22; 54 Совещание 23; 55 Совещание 24

Changed:

| ID | Task | Start | Finish | Duration | Total float | Predecessors | Other |
| --- | --- | --- | --- | --- | --- | --- | --- |
| 3 | Анализ и построение структуры базы объектов | 2023-03-23 14:00 → 2023-03-01 10:00 (-22d) | 2023-04-06 16:00 → 2023-03-16 12:00 (-21d) |  | 17.12d → 1.88d |  |  |
| 4 | Анализ и проектирование ядра |  | 2023-03-23 13:00 → 2023-04-06 16:00 (+14d) | 3w → 5w |  |  |  |
| 5 | **Разработка** |  | 2023-07-21 12:00 → 2023-06-21 09:23 (-30d) | 97.12d → 74.8d |  |  |  |
| 8 | Разработка 2D графических элементов |  | 2023-03-23 13:00 → 2023-03-30 13:00 (+7d) |  | 45.12d → 22.25d |  |  |
| 12 | Разработка дизайна сайта |  | 2023-03-30 15:00 → 2023-03-30 12:00 | 3w → 2.95w | 61.38d → 39.3d |  |  |
| 13 | **Программного обеспечения** | 2023-03-23 14:00 → 2023-03-16 12:00 (-7d) | 2023-07-21 12:00 → 2023-06-21 09:23 (-30d) | 81.88d → 64.67d |  |  |  |
| 14 | Программирование интерфейса | 2023-04-28 10:00 → 2023-04-20 16:49 (-8d) | 2023-05-24 10:00 → 2023-05-04 14:49 (-20d) | 3w → 1.53w | 34.88d → 17.4d |  | resources Программист #3; Программист #4 → Программист #3; Программист #4; Программист #1; Программист #2 |
| 15 | Программирование средств обработки базы объектов | 2023-04-06 16:00 → 2023-03-16 12:00 (-21d) | 2023-04-27 16:00 → 2023-04-06 12:00 (-21d) |  | 17.12d → 1.88d |  | resources Программист #3; Программист #4; Сервер → Программист #3; Программист #4; Сервер; Программист #1; Программист #2 |
| 16 | Создание модели ядра | 2023-03-23 14:00 → 2023-04-06 16:00 (+14d) | 2023-04-28 10:00 → 2023-04-20 16:49 (-8d) | 5.12w → 2.02w |  |  | resources Программист #1; Ведущий программист → Программист #1; Ведущий программист; Программист #2; Программист #3; Программист #4 |
| 17 | Создание рабочей версии ядра | 2023-05-10 10:00 → 2023-04-24 09:49 (-16d) | 2023-07-21 12:00 → 2023-06-21 09:23 (-30d) | 10.25w → 7.54w |  |  | resources Программист #1; Ведущий программист; Программист #2 → Программист #1; Ведущий программист; Программист #2; Программист #3; Программист #4 |
| 18 | **Тестирование** | 2023-04-28 10:00 → 2023-04-20 16:49 (-8d) | 2023-08-18 17:00 → 2023-07-07 11:03 (-42d) | 76.75d → 51.4d |  |  |  |
| 19 | Тестирование модели ядра | 2023-04-28 10:00 → 2023-04-20 16:49 (-8d) | 2023-05-10 10:00 → 2023-04-24 09:49 (-16d) | 1w → 0.25w |  |  | resources Программист #1 → Программист #1; Программист #2; Программист #3; Программист #4 |
| 20 | Тестирование сайта | 2023-07-21 12:00 → 2023-06-21 09:23 (-30d) | 2023-08-18 17:00 → 2023-07-07 11:03 (-42d) | 4.1w → 2.44w |  |  | resources Программист #1; Ведущий программист; Программист #2 → Программист #1; Ведущий программист; Программист #2; Программист #3; Программист #4 |
| 21 | **Документация** | 2023-05-24 10:00 → 2023-05-04 14:49 (-20d) | 2023-06-29 16:00 → 2023-06-14 10:49 (-15d) |  | 34.88d → 17.03d |  |  |
| 22 | Создание справочной системы | 2023-05-24 10:00 → 2023-05-04 14:49 (-20d) | 2023-06-07 12:00 → 2023-05-22 16:49 (-16d) |  | 51.5d → 32.4d |  |  |
| 23 | **Создание руководства пользователя** | 2023-05-24 10:00 → 2023-05-04 14:49 (-20d) | 2023-06-29 16:00 → 2023-06-14 10:49 (-15d) |  | 34.88d → 17.03d |  |  |
| 24 | Разработка дизайна руководства | 2023-05-24 10:00 → 2023-05-04 14:49 (-20d) | 2023-05-31 11:00 → 2023-05-15 15:49 (-16d) |  | 34.88d → 17.4d |  |  |
| 25 | Написание руководства пользователя | 2023-06-07 12:00 → 2023-05-22 16:49 (-16d) | 2023-06-29 16:00 → 2023-06-14 10:49 (-15d) |  | 36.12d → 17.03d |  |  |
| 26 | **Поддержка** | 2023-03-30 15:00 → 2023-03-30 12:00 | 2023-07-26 16:00 → 2023-07-05 12:00 (-21d) | 80.12d → 65d | 17.12d → 1.88d |  |  |
| 27 | Наполнение базы объектов | 2023-04-27 16:00 → 2023-04-06 12:00 (-21d) | 2023-07-26 16:00 → 2023-07-05 12:00 (-21d) |  | 17.12d → 1.88d |  |  |
| 28 | Создание мультимедиа-наполнения |  | 2023-05-10 12:00 → 2023-05-10 11:00 |  | 71.5d → 41.01d |  |  |
| 29 | Наполнение сайта | 2023-03-30 15:00 → 2023-03-30 12:00 | 2023-04-20 18:00 → 2023-04-20 16:00 |  | 61.38d → 39.3d |  |  |
| 30 | Сдача сайта в эксплуатацию | 2023-08-18 17:00 → 2023-07-07 11:03 (-42d) | 2023-08-18 17:00 → 2023-07-07 11:03 (-42d) |  |  | 20 → 26, 21, 18, 5, 2 |  |
| 31 | **Совещание** |  | 2023-08-16 10:00 → 2023-07-05 10:00 (-42d) | 115d → 85d | 2.75d → 2.13d |  |  |
