# РК1

How a schedule from MS Project changed from version to version. A marks actual dates.

## Version 1 (saved 2023-03-21, file task02.mpp)

Note of the change: ADD: задание 2 рк1

| ID | Task | Duration | Start | Finish | Total float |
| --- | --- | --- | --- | --- | --- |
| 1 | Начало реализации проекта | 0d | 2023-04-03 | 2023-04-03 | 15d |
| 2 | Программирование | 1d | 2023-04-03 | 2023-04-03 | 14d |
| 3 | Постановка задачи | 5d | 2023-04-03 | 2023-04-07 | 10d |
| 4 | Разработка интерфейса | 10d | 2023-04-03 | 2023-04-14 | 5d |
| 5 | Разработка модулей обработки данных | 15d | 2023-04-03 | 2023-04-21 | 0d |
| 6 | Разработка базы данных | 15d | 2023-04-03 | 2023-04-21 | 0d |
| 7 | Заполнение базы данных | 12d | 2023-04-03 | 2023-04-18 | 3d |
| 8 | Программирование завершено | 0d | 2023-04-03 | 2023-04-03 | 15d |
| 9 | Тестирование и отладка | 1d | 2023-04-03 | 2023-04-03 | 14d |
| 10 | Подготовка тестовых наборов данных | 5d | 2023-04-03 | 2023-04-07 | 10d |
| 11 | Тестирование и исправление ошибок | 15d | 2023-04-03 | 2023-04-21 | 0d |
| 12 | Отладка завершена | 0d | 2023-04-03 | 2023-04-03 | 15d |
| 13 | Разработка документации | 1d | 2023-04-03 | 2023-04-03 | 14d |
| 14 | Составление программной документации | 10d | 2023-04-03 | 2023-04-14 | 5d |
| 15 | Составление пользовательской документации | 15d | 2023-04-03 | 2023-04-21 | 0d |
| 16 | Конец проекта | 0d | 2023-04-03 | 2023-04-03 | 15d |

## Version 2 (saved 2023-03-21, file task03.mpp)

Note of the change: ADD: задание 3 рк1

Last finish stays 2023-04-21.

Changed:

| ID | Task | Finish | Duration | Total float |
| --- | --- | --- | --- | --- |
| 2 | **Программирование** | 2023-04-03 → 2023-04-21 (+18d) | 1d → 15d | 14d → 0d |
| 9 | **Тестирование и отладка** | 2023-04-03 → 2023-04-21 (+18d) | 1d → 15d | 14d → 0d |
| 13 | **Разработка документации** | 2023-04-03 → 2023-04-21 (+18d) | 1d → 15d | 14d → 0d |

## Version 3 (saved 2023-03-21, file task04.mpp)

Note of the change: Merge pull request #5 from MyMiDiII/rk1

Last finish 2023-04-21 → 2023-07-11 (+81d).

Changed:

| ID | Task | Start | Finish | Duration | Total float | Predecessors |
| --- | --- | --- | --- | --- | --- | --- |
| 2 | **Программирование** | 2023-04-03 → 2023-04-04 (+1d) | 2023-04-21 → 2023-05-22 (+31d) | 15d → 32d |  |  |
| 3 | Постановка задачи | 2023-04-03 → 2023-04-04 (+1d) | 2023-04-07 → 2023-04-10 (+3d) |  | 10d → 0d | none → 1FS+1d |
| 4 | Разработка интерфейса | 2023-04-03 → 2023-04-11 (+8d) | 2023-04-14 → 2023-04-24 (+10d) |  | 5d → 2d | none → 3 |
| 5 | Разработка модулей обработки данных | 2023-04-03 → 2023-04-25 (+22d) | 2023-04-21 → 2023-05-18 (+27d) |  | 0d → 2d | none → 4 |
| 6 | Разработка базы данных | 2023-04-03 → 2023-04-11 (+8d) | 2023-04-21 → 2023-05-02 (+11d) |  |  | none → 3 |
| 7 | Заполнение базы данных | 2023-04-03 → 2023-05-03 (+30d) | 2023-04-18 → 2023-05-22 (+34d) |  | 3d → 0d | none → 6 |
| 8 | Программирование завершено | 2023-04-03 → 2023-05-22 (+49d) | 2023-04-03 → 2023-05-22 (+49d) |  | 15d → 0d | none → 5, 7 |
| 9 | **Тестирование и отладка** | 2023-04-03 → 2023-05-16 (+43d) | 2023-04-21 → 2023-06-13 (+53d) | 15d → 20d | 0d → 20d |  |
| 10 | Подготовка тестовых наборов данных | 2023-04-03 → 2023-05-16 (+43d) | 2023-04-07 → 2023-05-22 (+45d) |  | 10d → 20d | none → 8FS-5d |
| 11 | Тестирование и исправление ошибок | 2023-04-03 → 2023-05-23 (+50d) | 2023-04-21 → 2023-06-13 (+53d) |  | 0d → 20d | none → 10 |
| 12 | Отладка завершена | 2023-04-03 → 2023-06-13 (+71d) | 2023-04-03 → 2023-06-13 (+71d) |  | 15d → 20d | none → 11 |
| 13 | **Разработка документации** | 2023-04-03 → 2023-06-06 (+64d) | 2023-04-21 → 2023-07-11 (+81d) | 15d → 25d |  |  |
| 14 | Составление программной документации | 2023-04-03 → 2023-06-06 (+64d) | 2023-04-14 → 2023-06-20 (+67d) |  | 5d → 0d | none → 8SS+10d |
| 15 | Составление пользовательской документации | 2023-04-03 → 2023-06-21 (+79d) | 2023-04-21 → 2023-07-11 (+81d) |  |  | none → 14 |
| 16 | Конец проекта | 2023-04-03 → 2023-07-11 (+99d) | 2023-04-03 → 2023-07-11 (+99d) |  | 15d → 0d | none → 15 |

## Version 4 (saved 2023-03-21, file task06.mpp)

Note of the change: ADD: задание 6 рк1

Last finish 2023-07-11 → 2023-07-07 (-4d).

Changed:

| ID | Task | Start | Finish | Duration | Total float | Other |
| --- | --- | --- | --- | --- | --- | --- |
| 2 | **Программирование** |  | 2023-05-22 → 2023-05-18 (-4d) | 32d → 30d |  | resources none → Сервер базы данных |
| 3 | Постановка задачи |  |  |  |  | resources none → Аналитик; Ведущий программист |
| 4 | Разработка интерфейса |  |  |  | 2d → 0d | resources none → Ведущий программист; Программист 1 |
| 5 | Разработка модулей обработки данных |  |  |  | 2d → 0d | resources none → Программист 2; Программист 3 |
| 6 | Разработка базы данных |  |  |  | 0d → 4d | resources none → Аналитик; Программист 1 |
| 7 | Заполнение базы данных |  | 2023-05-22 → 2023-05-12 (-10d) | 12d → 6d | 0d → 4d | resources none → Наборщики данных [200%] |
| 8 | Программирование завершено | 2023-05-22 → 2023-05-18 (-4d) | 2023-05-22 → 2023-05-18 (-4d) |  |  |  |
| 9 | **Тестирование и отладка** | 2023-05-16 → 2023-05-12 (-4d) | 2023-06-13 → 2023-06-08 (-5d) |  |  |  |
| 10 | Подготовка тестовых наборов данных | 2023-05-16 → 2023-05-12 (-4d) | 2023-05-22 → 2023-05-18 (-4d) |  |  | resources none → Программист 1; Программист 3 |
| 11 | Тестирование и исправление ошибок | 2023-05-23 → 2023-05-19 (-4d) | 2023-06-13 → 2023-06-08 (-5d) |  |  | resources none → Ведущий программист; Программист 2 |
| 12 | Отладка завершена | 2023-06-13 → 2023-06-08 (-5d) | 2023-06-13 → 2023-06-08 (-5d) |  |  |  |
| 13 | **Разработка документации** | 2023-06-06 → 2023-06-02 (-4d) | 2023-07-11 → 2023-07-07 (-4d) |  |  | resources none → Картриджи для принтера [2 шт/мес]; Бумага [1 пач/мес] |
| 14 | Составление программной документации | 2023-06-06 → 2023-06-02 (-4d) | 2023-06-20 → 2023-06-16 (-4d) |  |  | resources none → Технический писатель |
| 15 | Составление пользовательской документации | 2023-06-21 → 2023-06-19 (-2d) | 2023-07-11 → 2023-07-07 (-4d) |  |  | resources none → Технический писатель |
| 16 | Конец проекта | 2023-07-11 → 2023-07-07 (-4d) | 2023-07-11 → 2023-07-07 (-4d) |  |  |  |

## Version 5 (saved 2023-03-21, file task07.mpp)

Note of the change: Merge pull request #5 from MyMiDiII/rk1

Last finish 2023-07-07 → 2023-07-17 (+10d).

Changed:

| ID | Task | Start | Finish | Duration | Total float |
| --- | --- | --- | --- | --- | --- |
| 2 | **Программирование** |  | 2023-05-18 → 2023-05-26 (+8d) | 30d → 36d |  |
| 6 | Разработка базы данных |  | 2023-05-02 → 2023-05-18 (+16d) | 15d → 25d | 4d → 0d |
| 7 | Заполнение базы данных | 2023-05-03 → 2023-05-19 (+16d) | 2023-05-12 → 2023-05-26 (+14d) |  | 4d → 0d |
| 8 | Программирование завершено | 2023-05-18 → 2023-05-26 (+8d) | 2023-05-18 → 2023-05-26 (+8d) |  |  |
| 9 | **Тестирование и отладка** | 2023-05-12 → 2023-05-22 (+10d) | 2023-06-08 → 2023-06-19 (+11d) |  |  |
| 10 | Подготовка тестовых наборов данных | 2023-05-12 → 2023-05-22 (+10d) | 2023-05-18 → 2023-05-26 (+8d) |  |  |
| 11 | Тестирование и исправление ошибок | 2023-05-19 → 2023-05-29 (+10d) | 2023-06-08 → 2023-06-19 (+11d) |  |  |
| 12 | Отладка завершена | 2023-06-08 → 2023-06-19 (+11d) | 2023-06-08 → 2023-06-19 (+11d) |  |  |
| 13 | **Разработка документации** | 2023-06-02 → 2023-06-13 (+11d) | 2023-07-07 → 2023-07-17 (+10d) |  |  |
| 14 | Составление программной документации | 2023-06-02 → 2023-06-13 (+11d) | 2023-06-16 → 2023-06-26 (+10d) |  |  |
| 15 | Составление пользовательской документации | 2023-06-19 → 2023-06-27 (+8d) | 2023-07-07 → 2023-07-17 (+10d) |  |  |
| 16 | Конец проекта | 2023-07-07 → 2023-07-17 (+10d) | 2023-07-07 → 2023-07-17 (+10d) |  |  |

## Version 6 (saved 2023-03-21, file task08.mpp)

Note of the change: ADD: задание 9 рк1

Last finish 2023-07-17 → 2023-07-20 (+3d).

Added:

| ID | Task | Duration | Start | Finish | Constraint | Resources |
| --- | --- | --- | --- | --- | --- | --- |
| 17 | **Профилактика оборудования** | 44.5d | 2023-04-25 09:00 | 2023-07-04 12:00 |  |  |
| 18 | Профилактика оборудования 1 | 3h | 2023-04-25 09:00 | 2023-04-25 12:00 | start no earlier than 2023-04-25 09:00 | Специалист по профилактическим работам [1 выезд] |
| 19 | Профилактика оборудования 2 | 3h | 2023-05-10 09:00 | 2023-05-10 12:00 | start no earlier than 2023-05-09 09:00 | Специалист по профилактическим работам [1 выезд] |
| 20 | Профилактика оборудования 3 | 3h | 2023-05-23 09:00 | 2023-05-23 12:00 | start no earlier than 2023-05-23 09:00 | Специалист по профилактическим работам [1 выезд] |
| 21 | Профилактика оборудования 4 | 3h | 2023-06-06 09:00 | 2023-06-06 12:00 | start no earlier than 2023-06-06 09:00 | Специалист по профилактическим работам [1 выезд] |
| 22 | Профилактика оборудования 5 | 3h | 2023-06-20 09:00 | 2023-06-20 12:00 | start no earlier than 2023-06-20 09:00 | Специалист по профилактическим работам [1 выезд] |
| 23 | Профилактика оборудования 6 | 3h | 2023-07-04 09:00 | 2023-07-04 12:00 | start no earlier than 2023-07-04 09:00 | Специалист по профилактическим работам [1 выезд] |

Changed:

| ID | Task | Start | Finish |
| --- | --- | --- | --- |
| 1 | Начало реализации проекта | 2023-04-03 → 2023-04-03 09:00 | 2023-04-03 → 2023-04-03 09:00 |
| 2 | **Программирование** | 2023-04-04 → 2023-04-04 09:00 | 2023-05-26 → 2023-05-30 10:00 (+4d) |
| 3 | Постановка задачи | 2023-04-04 → 2023-04-04 09:00 | 2023-04-10 → 2023-04-10 18:00 |
| 4 | Разработка интерфейса | 2023-04-11 → 2023-04-11 09:00 | 2023-04-24 → 2023-04-24 18:00 |
| 5 | Разработка модулей обработки данных | 2023-04-25 → 2023-04-25 09:00 | 2023-05-18 → 2023-05-19 16:00 (+1d) |
| 6 | Разработка базы данных | 2023-04-11 → 2023-04-11 09:00 | 2023-05-18 → 2023-05-19 16:00 (+1d) |
| 7 | Заполнение базы данных | 2023-05-19 → 2023-05-19 16:00 | 2023-05-26 → 2023-05-30 10:00 (+4d) |
| 8 | Программирование завершено | 2023-05-26 → 2023-05-30 10:00 (+4d) | 2023-05-26 → 2023-05-30 10:00 (+4d) |
| 9 | **Тестирование и отладка** | 2023-05-22 → 2023-05-22 16:00 | 2023-06-19 → 2023-06-21 17:00 (+2d) |
| 10 | Подготовка тестовых наборов данных | 2023-05-22 → 2023-05-22 16:00 | 2023-05-26 → 2023-05-30 10:00 (+4d) |
| 11 | Тестирование и исправление ошибок | 2023-05-29 → 2023-05-30 10:00 (+1d) | 2023-06-19 → 2023-06-21 17:00 (+2d) |
| 12 | Отладка завершена | 2023-06-19 → 2023-06-21 17:00 (+2d) | 2023-06-19 → 2023-06-21 17:00 (+2d) |
| 13 | **Разработка документации** | 2023-06-13 → 2023-06-14 14:00 (+1d) | 2023-07-17 → 2023-07-20 11:00 (+3d) |
| 14 | Составление программной документации | 2023-06-13 → 2023-06-14 14:00 (+1d) | 2023-06-26 → 2023-06-28 17:00 (+2d) |
| 15 | Составление пользовательской документации | 2023-06-27 → 2023-06-28 17:00 (+1d) | 2023-07-17 → 2023-07-20 11:00 (+3d) |
| 16 | Конец проекта | 2023-07-17 → 2023-07-20 11:00 (+3d) | 2023-07-17 → 2023-07-20 11:00 (+3d) |

## Version 7 (saved 2023-03-21, file task09.mpp)

Note of the change: ADD: задание 9 рк1

Last finish 2023-07-20 → 2023-07-11 (-9d).

Changed:

| ID | Task | Start | Finish | Duration | Total float | Other |
| --- | --- | --- | --- | --- | --- | --- |
| 1 | Начало реализации проекта |  |  |  |  | baseline start none → 2023-04-03 09:00; baseline finish none → 2023-04-03 09:00 |
| 2 | **Программирование** |  | 2023-05-30 10:00 → 2023-05-19 10:00 (-11d) | 36d → 29.38d |  | baseline start none → 2023-04-04 09:00; baseline finish none → 2023-05-19 10:00 |
| 3 | Постановка задачи |  |  |  |  | baseline start none → 2023-04-04 09:00; baseline finish none → 2023-04-10 18:00 |
| 4 | Разработка интерфейса |  | 2023-04-24 18:00 → 2023-04-17 18:00 (-7d) | 10d → 5d | 6d → 0d | resources Ведущий программист; Программист 1 → Ведущий программист; Программист 1; Программист 2; Программист 3; baseline start none → 2023-04-11 09:00; baseline finish none → 2023-04-17 18:00 |
| 5 | Разработка модулей обработки данных | 2023-04-25 09:00 → 2023-04-26 09:00 (+1d) | 2023-05-19 16:00 → 2023-05-19 10:00 | 15d → 13.75d | 6d → 0d | resources Программист 2; Программист 3 → Программист 2; Программист 3; Программист 1; baseline start none → 2023-04-26 09:00; baseline finish none → 2023-05-19 10:00 |
| 6 | Разработка базы данных |  | 2023-05-19 16:00 → 2023-05-02 16:00 (-17d) | 25d → 14.38d | 0d → 4d | resources Аналитик; Программист 1 → Аналитик; Программист 1; Программист 2; Программист 3; baseline start none → 2023-04-11 09:00; baseline finish none → 2023-05-02 16:00 |
| 7 | Заполнение базы данных | 2023-05-19 16:00 → 2023-05-02 16:00 (-17d) | 2023-05-30 10:00 → 2023-05-15 10:00 (-15d) |  | 0d → 4d | baseline start none → 2023-05-02 16:00; baseline finish none → 2023-05-15 10:00 |
| 8 | Программирование завершено | 2023-05-30 10:00 → 2023-05-19 10:00 (-11d) | 2023-05-30 10:00 → 2023-05-19 10:00 (-11d) |  |  | baseline start none → 2023-05-19 10:00; baseline finish none → 2023-05-19 10:00 |
| 9 | **Тестирование и отладка** | 2023-05-22 16:00 → 2023-05-15 12:00 (-7d) | 2023-06-21 17:00 → 2023-06-05 11:40 (-16d) | 20d → 14.58d | 20d → 24.17d | baseline start none → 2023-05-15 12:00; baseline finish none → 2023-06-05 11:40 |
| 10 | Подготовка тестовых наборов данных | 2023-05-22 16:00 → 2023-05-15 12:00 (-7d) | 2023-05-30 10:00 → 2023-05-24 16:40 (-6d) | 5d → 6.67d | 20d → 24.17d | resources Программист 1; Программист 3 → Программист 1; Программист 3; Программист 2; baseline start none → 2023-05-15 12:00; baseline finish none → 2023-05-24 16:40 |
| 11 | Тестирование и исправление ошибок | 2023-05-30 10:00 → 2023-05-24 16:40 (-6d) | 2023-06-21 17:00 → 2023-06-05 11:40 (-16d) | 15d → 7.5d | 20d → 24.17d | resources Ведущий программист; Программист 2 → Ведущий программист; Программист 2; Программист 1; Программист 3; baseline start none → 2023-05-24 16:40; baseline finish none → 2023-06-05 11:40 |
| 12 | Отладка завершена | 2023-06-21 17:00 → 2023-06-05 11:40 (-16d) | 2023-06-21 17:00 → 2023-06-05 11:40 (-16d) |  | 20d → 24.17d | baseline start none → 2023-06-05 11:40; baseline finish none → 2023-06-05 11:40 |
| 13 | **Разработка документации** | 2023-06-14 14:00 → 2023-06-02 14:00 (-12d) | 2023-07-20 11:00 → 2023-07-11 15:00 (-9d) |  |  | baseline start none → 2023-06-02 14:00; baseline finish none → 2023-07-11 15:00 |
| 14 | Составление программной документации | 2023-06-14 14:00 → 2023-06-02 14:00 (-12d) | 2023-06-28 17:00 → 2023-06-19 17:00 (-9d) |  |  | baseline start none → 2023-06-02 14:00; baseline finish none → 2023-06-19 17:00 |
| 15 | Составление пользовательской документации | 2023-06-28 17:00 → 2023-06-19 17:00 (-9d) | 2023-07-20 11:00 → 2023-07-11 15:00 (-9d) |  |  | baseline start none → 2023-06-19 17:00; baseline finish none → 2023-07-11 15:00 |
| 16 | Конец проекта | 2023-07-20 11:00 → 2023-07-11 15:00 (-9d) | 2023-07-20 11:00 → 2023-07-11 15:00 (-9d) |  |  | baseline start none → 2023-07-11 15:00; baseline finish none → 2023-07-11 15:00 |
| 17 | **Профилактика оборудования** |  |  |  | 11.5d → 4.88d | baseline start none → 2023-04-25 09:00; baseline finish none → 2023-07-04 12:00 |
| 18 | Профилактика оборудования 1 |  |  |  | 55.62d → 49d | baseline start none → 2023-04-25 09:00; baseline finish none → 2023-04-25 12:00 |
| 19 | Профилактика оборудования 2 |  |  |  | 48d → 41.38d | baseline start none → 2023-05-10 09:00; baseline finish none → 2023-05-10 12:00 |
| 20 | Профилактика оборудования 3 |  |  |  | 39.38d → 32.75d | baseline start none → 2023-05-23 09:00; baseline finish none → 2023-05-23 12:00 |
| 21 | Профилактика оборудования 4 |  |  |  | 29.75d → 23.12d | baseline start none → 2023-06-06 09:00; baseline finish none → 2023-06-06 12:00 |
| 22 | Профилактика оборудования 5 |  |  |  | 21.12d → 14.5d | baseline start none → 2023-06-20 09:00; baseline finish none → 2023-06-20 12:00 |
| 23 | Профилактика оборудования 6 |  |  |  | 11.5d → 4.88d | baseline start none → 2023-07-04 09:00; baseline finish none → 2023-07-04 12:00 |

## Version 8 (data date 2023-06-01, saved 2023-03-21, file task10.mpp)

Note of the change: ADD: задание 10 рк1

Last finish 2023-07-11 → 2023-07-17 (+6d). Complete tasks 0 → 11.

Changed:

| ID | Task | Start | Finish | Duration | Complete | Total float |
| --- | --- | --- | --- | --- | --- | --- |
| 1 | Начало реализации проекта | 2023-04-03 09:00 A | 2023-04-03 09:00 A |  | 0% → 100% | 0d → none |
| 2 | **Программирование** | 2023-04-04 09:00 A | 2023-05-19 10:00 → 2023-05-24 18:00 A (+5d) | 29.38d → 32.88d | 0% → 100% | 0d → none |
| 3 | Постановка задачи | 2023-04-04 09:00 A | 2023-04-10 18:00 A |  | 0% → 100% | 0d → none |
| 4 | Разработка интерфейса | 2023-04-11 09:00 A | 2023-04-17 18:00 A |  | 0% → 100% | 0d → none |
| 5 | Разработка модулей обработки данных | 2023-04-26 09:00 A | 2023-05-19 10:00 → 2023-05-24 18:00 A (+5d) | 13.75d → 17.25d | 0% → 100% | 0d → none |
| 6 | Разработка базы данных | 2023-04-11 09:00 A | 2023-05-02 16:00 A |  | 0% → 100% | 4d → none |
| 7 | Заполнение базы данных | 2023-05-02 16:00 A | 2023-05-15 10:00 A |  | 0% → 100% | 4d → none |
| 8 | Программирование завершено | 2023-05-19 10:00 → 2023-05-24 18:00 A (+5d) | 2023-05-19 10:00 → 2023-05-24 18:00 A (+5d) |  | 0% → 100% | 0d → none |
| 9 | **Тестирование и отладка** | 2023-05-15 12:00 → 2023-05-22 09:00 A (+7d) | 2023-06-05 11:40 → 2023-06-07 17:00 (+2d) | 14.58d → 12.12d | 0% → 55% | 24.17d → 25.5d |
| 10 | Подготовка тестовых наборов данных | 2023-05-15 12:00 → 2023-05-22 09:00 A (+7d) | 2023-05-24 16:40 → 2023-05-26 18:00 A (+2d) | 6.67d → 4.21d | 0% → 100% | 24.17d → none |
| 11 | Тестирование и исправление ошибок | 2023-05-24 16:40 → 2023-05-29 09:00 A (+5d) | 2023-06-05 11:40 → 2023-06-07 17:00 (+2d) |  | 0% → 30% | 24.17d → 25.5d |
| 12 | Отладка завершена | 2023-06-05 11:40 → 2023-06-07 17:00 (+2d) | 2023-06-05 11:40 → 2023-06-07 17:00 (+2d) |  |  | 24.17d → 25.5d |
| 13 | **Разработка документации** | 2023-06-02 14:00 → 2023-06-08 12:00 (+6d) | 2023-07-11 15:00 → 2023-07-17 10:00 (+6d) |  |  |  |
| 14 | Составление программной документации | 2023-06-02 14:00 → 2023-06-08 12:00 (+6d) | 2023-06-19 17:00 → 2023-06-23 16:00 (+4d) |  |  |  |
| 15 | Составление пользовательской документации | 2023-06-19 17:00 → 2023-06-23 16:00 (+4d) | 2023-07-11 15:00 → 2023-07-17 10:00 (+6d) |  |  |  |
| 16 | Конец проекта | 2023-07-11 15:00 → 2023-07-17 10:00 (+6d) | 2023-07-11 15:00 → 2023-07-17 10:00 (+6d) |  |  |  |
| 17 | **Профилактика оборудования** | 2023-04-25 09:00 A |  |  | 0% → 50% | 4.88d → 8.38d |
| 18 | Профилактика оборудования 1 | 2023-04-25 09:00 A | 2023-04-25 12:00 A |  | 0% → 100% | 49d → none |
| 19 | Профилактика оборудования 2 | 2023-05-10 09:00 A | 2023-05-10 12:00 A |  | 0% → 100% | 41.38d → none |
| 20 | Профилактика оборудования 3 | 2023-05-23 09:00 A | 2023-05-23 12:00 A |  | 0% → 100% | 32.75d → none |
